# PROGRAMACION DIAGRAMA GANTT FINAL

How a schedule from MS Project changed from version to version. A marks actual dates.

## Version 1 (saved 2022-04-01)

Note of the change: a

| ID | WBS | Task | Duration | Start | Finish | Predecessors | Total float |
| --- | --- | --- | --- | --- | --- | --- | --- |
| 1 | 1 | **"MEJORAMIENTO DEL SERVICIO EDUCATIVO EN LA IEP N 54002 SANTA ROSA E IES SANTA ROSA DEL DISTRITO DE ABANCAY, PROVINCIA DE ABANCAY -** | 61d | 2022-02-19 | 2022-04-30 |  | 0d |
| 2 |  | Inicio de Obra | 0d | 2022-02-19 | 2022-02-19 |  | 61d |
| 3 | 1.2 | **MAYORES METRADOS** | 61d | 2022-02-19 | 2022-04-30 |  | 0d |
| 4 | 1.2.1 | **OBRAS PROVISIONALES, TRABAJOS PRELIMINARES, SEGURIDAD Y SALUD** | 14d | 2022-02-19 | 2022-03-07 |  | 0d |
| 5 | 1.2.1.1 | **SEGURIDAD Y SALUD** | 4d | 2022-02-19 | 2022-02-23 |  | 0d |
| 6 |  | EQUIPOS DE PROTECCIÓN INDIVIDUAL | 4d | 2022-02-19 | 2022-02-23 |  | 0d |
| 7 |  | SEÑALIZACIÓN TEMPORAL DE SEGURIDAD | 1d | 2022-02-19 | 2022-02-19 | 6SS | 0d |
| 8 |  | EQUIPOS DE PROTECCIÓN COLECTIVA | 1d | 2022-02-19 | 2022-02-19 | 7SS | 60d |
| 9 | 1.2.1.2 | **OBRAS PROVICIONALES** | 14d | 2022-02-19 | 2022-03-07 |  | 47d |
| 10 | 1.2.1.2.1 | **TRASLADO INTERNO EN OBRA** | 14d | 2022-02-19 | 2022-03-07 |  | 47d |
| 11 |  | TRASLADO DE MADERA DIST. MAX. 40M | 4d | 2022-02-21 | 2022-02-24 | 13SS | 56d |
| 12 |  | TRASLADO DE AGRAGADOS CON CARRETILLA DIST. MAX 40M | 13d | 2022-02-21 | 2022-03-07 | 22SS | 47d |
| 13 |  | TRASLADO DE CEMENTO DIST. MAX. 40M | 6d | 2022-02-21 | 2022-02-26 | 12SS | 54d |
| 14 |  | TRASLADO DE LADRILLO DE PARET DIST. MAX. 40M | 6d | 2022-02-19 | 2022-02-25 | 13FS-7d | 55d |
| 15 | 1.2.2 | **ESTRUCTURA** | 55d | 2022-02-21 | 2022-04-25 |  | 0d |
| 16 | 1.2.2.1 | **MOVIMIENTO DE TIERRAS** | 26d | 2022-03-26 | 2022-04-25 |  | 5d |
| 17 |  | RELLENO Y COMPACTADO CON MATERIAL DE PRESTAMO | 2d | 2022-03-26 | 2022-03-29 | 30SF | 5d |
| 18 |  | ACARREO DE MATERIALES EXCEDENTE(D=40cm) | 17d | 2022-03-28 | 2022-04-15 | 17FS-1d | 5d |
| 19 |  | ELIMINACION DE MATERIAL EXCEDENTE | 17d | 2022-04-06 | 2022-04-25 | 18FS-9d | 5d |
| 20 | 1.2.2.2 | **CONCRETO SIMPLE** | 35d | 2022-02-21 | 2022-04-01 |  | 0d |
| 21 | 1.2.2.2.1 | **SOLADOS** | 6d | 2022-02-21 | 2022-02-26 |  | 0d |
| 22 |  | SOLADO f´c=80 Kg/cm2 E=10 CM | 6d | 2022-02-21 | 2022-02-26 | 7 | 0d |
| 23 | 1.2.2.2.2 | **CIMIENTOS CORRIDOS** | 8d | 2022-03-17 | 2022-03-25 |  | 26d |
| 24 |  | CIMIENTOS CORRIDOS CONCRETO f´c=140 Kg/cm2 + 30% P.G. | 2d | 2022-03-24 | 2022-03-25 | 25FS-1d | 26d |
| 25 |  | ENCOFRADO Y DESENCOFRADO EN CIMIENTOS CORRIDO | 7d | 2022-03-17 | 2022-03-24 | 33 | 26d |
| 26 | 1.2.2.2.3 | **SOBRECIMIENTOS** | 5d | 2022-03-26 | 2022-03-31 |  | 26d |
| 27 |  | SOBRECIMIENTO - CONCRETO f'c=175 Kg/cm2 + 25% P.M. | 1d | 2022-03-31 | 2022-03-31 | 28 | 26d |
| 28 |  | ENCOFRADO Y DESENCOFRADO EN SOBRECIMIENTOS | 4d | 2022-03-26 | 2022-03-30 | 24 | 26d |
| 29 | 1.2.2.2.4 | **FALSO PISO** | 4d | 2022-03-29 | 2022-04-01 |  | 0d |
| 30 |  | FALSO PISO f'c=140 kf/cm2 (e= 10 cm) | 4d | 2022-03-29 | 2022-04-01 | 44 | 0d |
| 31 | 1.2.2.3 | **OBRAS DE CONCRETO ARMADO** | 40d | 2022-02-28 | 2022-04-14 |  | 0d |
| 32 | 1.2.2.3.1 | **ZAPATAS** | 15d | 2022-02-28 | 2022-03-16 |  | 0d |
| 33 |  | ZAPATAS - CONCRETO PREMEZCLADO F´c=210 Kg/cm2 | 3d | 2022-03-14 | 2022-03-16 | 34 | 0d |
| 34 |  | ZAPATAS - ENCOFRADO Y DESENCOFRADO | 10d | 2022-03-02 | 2022-03-12 | 35FS-3d | 0d |
| 35 |  | ZAPATAS - ACERO f'y=4200 Kg/cm2 | 5d | 2022-02-28 | 2022-03-04 | 22 | 0d |
| 36 | 1.2.2.3.2 | **MURO DE CONTENCION** | 19d | 2022-02-28 | 2022-03-21 |  | 32d |
| 37 |  | MURO DE CONTENCIÓN - CONCRETO PREMEZCLADO F´c=210 Kg/cm2 | 3d | 2022-03-18 | 2022-03-21 | 38FS-1d | 32d |
| 38 |  | MURO DE CONTENCIÓN - ENCOFRADO Y DESENCOFRADO | 12d | 2022-03-05 | 2022-03-18 | 39FS-6d | 32d |
| 39 |  | MURO DE CONTENCIÓN - ACERO f'y=4200 Kg/cm2 | 11d | 2022-02-28 | 2022-03-11 | 22 | 32d |
| 40 | 1.2.2.3.3 | **PLACAS** | 5d | 2022-03-17 | 2022-03-22 |  | 34d |
| 41 |  | PLACAS - CONCRETO PREMEZCLADO F´c=210 Kg/cm2 | 1d | 2022-03-22 | 2022-03-22 | 42 | 34d |
| 42 |  | PLACAS - ACERO f'y=4200 Kg/cm2 | 4d | 2022-03-17 | 2022-03-21 | 33 | 34d |
| 43 | 1.2.2.3.4 | **COLUMNAS** | 10d | 2022-03-17 | 2022-03-28 |  | 0d |
| 44 |  | COLUMNAS - CONCRETO PREMEZCLADO F´c=210 Kg/cm2 | 1d | 2022-03-28 | 2022-03-28 | 45 | 0d |
| 45 |  | COLUMNAS - ENCOFRADO Y DESENCOFRADO | 6d | 2022-03-21 | 2022-03-26 | 46FS-2d | 0d |
| 46 |  | COLUMNAS - ACERO f'y=4200 Kg/cm2 | 5d | 2022-03-17 | 2022-03-22 | 33 | 0d |
| 47 | 1.2.2.3.5 | **VIGAS** | 1d | 2022-03-29 | 2022-03-29 |  | 28d |
| 48 |  | VIGAS - CONCRETO PREMEZCLADO F´c=210 Kg/cm2 | 1d | 2022-03-29 | 2022-03-29 | 44 | 28d |
| 49 | 1.2.2.3.6 | **COLUMNETAS** | 8d | 2022-03-17 | 2022-03-25 |  | 14d |
| 50 |  | COLUMNETAS - CONCRETO f'c=175 Kg/cm2 | 2d | 2022-03-24 | 2022-03-25 | 51FS-1d | 14d |
| 51 |  | COLUMNETAS - ENCOFRADO Y DESENCOFRADO | 5d | 2022-03-19 | 2022-03-24 | 52FS-2d | 14d |
| 52 |  | COLUMNETAS - ACERO f'y=4200 Kg/cm2 | 4d | 2022-03-17 | 2022-03-21 | 46SS | 14d |
| 53 | 1.2.2.3.7 | **VIGUETAS** | 9d | 2022-03-26 | 2022-04-05 |  | 14d |
| 54 |  | VIGUETAS - CONCRETO f'c=175 Kg/cm2 | 1d | 2022-04-05 | 2022-04-05 | 56 | 14d |
| 55 |  | VIGUETAS - ENCOFRADO Y DESENCOFRADO | 6d | 2022-03-26 | 2022-04-01 | 50 | 14d |
| 56 |  | VIGUETAS - ACERO f'y=4200 Kg/cm2 | 4d | 2022-03-31 | 2022-04-04 | 55FS-2d | 14d |
| 57 | 1.2.2.3.8 | **TANQUE ELEVADO** | 8d | 2022-04-06 | 2022-04-14 |  | 14d |
| 58 | 1.2.2.3.8.1 | **LOSA MACIZA DE FONDO - TANQUE ELEVADO e=25cm** | 6d | 2022-04-08 | 2022-04-14 |  | 14d |
| 59 |  | LOSA MACIZA TANQUE ELEVADO - CONCRETO PREMEZCLADO F´c=210 Kg/cm2 CON IMPERMEABILIZANTE | 1d | 2022-04-14 | 2022-04-14 | 61 | 14d |
| 60 |  | LOSA MACIZA TANQUE ELEVADO - ENCOFRADO Y DESENCOFRADO | 3d | 2022-04-08 | 2022-04-11 | 63 | 14d |
| 61 |  | LOSA MACIZA TANQUE ELEVADO - ACERO f'y=4200 Kg/cm2 | 2d | 2022-04-12 | 2022-04-13 | 60 | 14d |
| 62 | 1.2.2.3.8.2 | **MURO DE TANQUE ELEVADO E=25cm** | 2d | 2022-04-06 | 2022-04-07 |  | 14d |
| 63 |  | MURO - CONCRETO PREMEZCLADO F´c=210 Kg/cm2 CON IMPERMEABILIZANTE | 1d | 2022-04-07 | 2022-04-07 | 64 | 14d |
| 64 |  | MURO - ENCOFRADO Y DESENCOFRADO | 1d | 2022-04-06 | 2022-04-06 | 54 | 14d |
| 65 |  | MURO - ACERO f'y=4200 Kg/cm2 | 1d | 2022-04-07 | 2022-04-07 | 64 | 20d |
| 66 | 1.2.2.3.9 | **PAVIMENTO RIGIDO** | 3d | 2022-03-22 | 2022-03-24 |  | 32d |
| 67 |  | PAVIMENTO RIGIDO 0.20M - CONCRETO PREMEZCLADO F´c=210 Kg/cm2 | 2d | 2022-03-22 | 2022-03-23 | 37 | 32d |
| 68 |  | PAVIMENTO RIGIDO 0.20m - DOWELLS EN LOSAS RIGIDAS- JUNTA DE DILATACION, L=46CM | 1d | 2022-03-24 | 2022-03-24 | 67 | 32d |
| 69 | 1.2.2.4 | **ESTRUCTURA METALICA** | 10d | 2022-04-02 | 2022-04-13 |  | 15d |
| 70 | 1.2.2.4.1 | **PERGOLAS** | 10d | 2022-04-02 | 2022-04-13 |  | 15d |

| ID | WBS | Task | Duration | Start | Finish | Predecessors | Total float |
| --- | --- | --- | --- | --- | --- | --- | --- |
| 71 |  | ANCLAJE DE COLUMNAS CON PLANCHA METALICA e=12mm | 1d | 2022-04-02 | 2022-04-02 | 30 | 15d |
| 72 |  | COLUMNAS METAALICAS CON TUBO LAC CUA. 150X150 e=4.5mm | 1d | 2022-04-04 | 2022-04-04 | 71 | 15d |
| 73 |  | VIGAS METALICAS TRANSVERSALES CON TUBO LAC. RECT. 150X100 | 1d | 2022-04-05 | 2022-04-05 | 72 | 15d |
| 74 |  | VIGAS METALICAS CURVADAS CON TUBO LAC. RECT. 150X100 | 1d | 2022-04-06 | 2022-04-06 | 73 | 15d |
| 75 |  | CORREAS METALICAS CON TUBO LAC. RECT. 150X50 | 3d | 2022-04-07 | 2022-04-09 | 74 | 15d |
| 76 | 1.2.2.4.1.6 | **INSTALACION Y MONTAJE** | 3d | 2022-04-11 | 2022-04-13 |  | 15d |
| 77 |  | INSTALACION Y MONTAJE DE COLUMNAS, VIGAS Y CORREAS DE PERGOLAS | 3d | 2022-04-11 | 2022-04-13 | 75 | 15d |
| 78 | 1.2.3 | **ARQUITECTURA** | 60d | 2022-02-21 | 2022-04-30 |  | 0d |
| 79 | 1.2.3.1 | **MUROS Y TABIQUES** | 14d | 2022-02-21 | 2022-03-08 |  | 10d |
| 80 |  | MURO DE LADRILLO KK TIPO IV SOGA, M:1:4, E=1.5cm | 9d | 2022-02-21 | 2022-03-02 | 7 | 10d |
| 81 |  | DIVISOR EN BAÑOS DE PLANCHA DE ACERO INOX. | 5d | 2022-03-03 | 2022-03-08 | 80 | 46d |
| 82 | 1.2.3.2 | **REVOQUES ENLUCIDOS Y MOLDURAS** | 32d | 2022-03-03 | 2022-04-08 |  | 10d |
| 83 |  | TARRAJEO PRIMARIO Y RAYADO | 8d | 2022-03-03 | 2022-03-11 | 80 | 10d |
| 84 |  | TARRAJEO EN MURO INTERIORES MEZCLA 1:4 CEMENTO:ARENA | 8d | 2022-03-08 | 2022-03-16 | 83FS-4d | 10d |
| 85 |  | TARRAJEO EN MURO EXTERIORES MEZCLA 1:4 CEMENTO:ARENA | 7d | 2022-03-14 | 2022-03-21 | 84FS-3d | 10d |
| 86 |  | TARRAJEO DE SUPERFICIE DE COLUMNAS INCL. ARISTAS MEZCLA 1:4 CEMENTO:ARENA | 8d | 2022-03-22 | 2022-03-30 | 85 | 10d |
| 87 |  | TARRAJEO DE SUPERF. VIGAS INCL. ARISTAS MEZCLA 1:4 CEMENTO:ARENA | 6d | 2022-03-29 | 2022-04-04 | 86FS-2d | 10d |
| 88 |  | TARRAJEO EN TRIBUNA | 4d | 2022-03-22 | 2022-03-25 | 85 | 31d |
| 89 |  | TARRAJEO EN FONDO DE ESCALERA CON MEZCLA C:A 1:4 E=1.5cm | 5d | 2022-03-22 | 2022-03-26 | 85 | 25d |
| 90 |  | TARRAJEO EN CISTERNA CON IMPERMEABILIZANTE MEZCLA 1:5 CEMENTO:ARENA | 5d | 2022-03-28 | 2022-04-01 | 89 | 25d |
| 91 |  | MESA DE CONCRETO CON ACABADO CERAMICO 30x30cm EN SS.HH. E=0.15cm | 2d | 2022-03-17 | 2022-03-18 | 84 | 19d |
| 92 |  | VESTIDURA DE DERRAMES (1:5) | 12d | 2022-03-19 | 2022-04-01 | 91 | 19d |
| 93 |  | BRUÑAS DE 1CM ENTRE MUROS Y ESTRUCTURAS | 12d | 2022-03-26 | 2022-04-08 | 92FS-6d | 19d |
| 94 | 1.2.3.3 | **PISOS Y PAVIMENTOS** | 31d | 2022-03-26 | 2022-04-30 |  | 0d |
| 95 | 1.2.3.3.1 | **CONTRAPISOS** | 8d | 2022-04-02 | 2022-04-11 |  | 0d |
| 96 |  | CONTRAPISO DE 48mm. | 8d | 2022-04-02 | 2022-04-11 | 30 | 0d |
| 97 | 1.2.3.3.2 | **PISOS** | 17d | 2022-04-12 | 2022-04-30 |  | 0d |
| 98 |  | PISO DE CEMENTO PULIDO H=0.10m | 2d | 2022-04-12 | 2022-04-13 | 96 | 0d |
| 99 |  | PISO TERRAZO PULIDO DE 25CM | 15d | 2022-04-14 | 2022-04-30 | 98 | 0d |
| 100 |  | PISO PORCELANATO ANTIDESLIZANTE DE 60X60M | 15d | 2022-04-12 | 2022-04-28 | 96 | 2d |
| 101 |  | VEREDAS DE CONCRETO f´c 175kG/CM2 INCL. ENCOFRADO | 2d | 2022-04-12 | 2022-04-13 | 96 | 0d |
| 102 |  | BRUÑADO EN RAMPAS 1CM | 15d | 2022-04-14 | 2022-04-30 | 101 | 0d |
| 103 | 1.2.3.3.3 | **SARDINELES** | 9d | 2022-03-26 | 2022-04-05 |  | 22d |
| 104 |  | SARDINEL REVESTIDA CON CERAMICO H=0.10m | 5d | 2022-03-26 | 2022-03-31 | 50 | 22d |
| 105 |  | SARDINEL DE CONFINAMIENTO | 4d | 2022-04-01 | 2022-04-05 | 104 | 22d |
| 106 | 1.2.3.4 | **ZOCALOS Y CONTRAZOCALOS** | 11d | 2022-03-17 | 2022-03-29 |  | 27d |
| 107 | 1.2.3.4.1 | **ZOCALOS** | 6d | 2022-03-17 | 2022-03-23 |  | 27d |
| 108 |  | ZOCALO DE PORCELANATO DE 60X60m H=1.20M | 6d | 2022-03-17 | 2022-03-23 | 84 | 27d |
| 109 | 1.2.3.4.2 | **CONTRAZOCALOS** | 5d | 2022-03-24 | 2022-03-29 |  | 27d |
| 110 |  | CONTRAZOCALO DE CEMENTO PULIDO C/MORTERO 1:5 DE 2CM, H=30CM | 5d | 2022-03-24 | 2022-03-29 | 108 | 27d |
| 111 | 1.2.3.5 | **CARPINTERIA DE MADERA** | 5d | 2022-03-22 | 2022-03-26 |  | 16d |
| 112 |  | PUERTA TABLERO REBAJADO AGUANO DOBLE HOJA C/SOBRE LUZ | 5d | 2022-03-22 | 2022-03-26 | 85 | 16d |
| 113 | 1.2.3.6 | **CARPINTERIA METALICA** | 14d | 2022-03-28 | 2022-04-12 |  | 16d |
| 114 | 1.2.3.6.1 | **CARPINTERIA DE FIERRO** | 2d | 2022-03-28 | 2022-03-29 |  | 16d |
| 115 |  | PUERTA DE ACERO INOXIDABLE EN BAÑOS | 2d | 2022-03-28 | 2022-03-29 | 112 | 16d |
| 116 | 1.2.3.6.2 | **CARPINTERIA DE ALUMINIO** | 3d | 2022-03-30 | 2022-04-01 |  | 16d |
| 117 |  | MAMPARA DE ALUMINIO CON VIDRIO LAMINADO DE 10mm | 3d | 2022-03-30 | 2022-04-01 | 115 | 16d |
| 118 | 1.2.3.6.3 | **BARANDAS Y PASAMANOS** | 9d | 2022-04-02 | 2022-04-12 |  | 16d |
| 119 |  | BARANDA METALICA TIPO - 2 (VIDRIO TEMPLADO) | 2d | 2022-04-02 | 2022-04-04 | 117 | 16d |
| 120 |  | BARANDA METALICA TIPO – 6 | 7d | 2022-04-05 | 2022-04-12 | 119 | 16d |
| 121 | 1.2.3.7 | **CERRAJERIA** | 2d | 2022-03-28 | 2022-03-29 |  | 28d |
| 122 |  | BISAGRA CAPUCHINA DE 4" | 1d | 2022-03-28 | 2022-03-28 | 112 | 28d |
| 123 |  | BISAGRA GIRATORIA PARA PUERTA DE VIDRIO | 1d | 2022-03-29 | 2022-03-29 | 122 | 28d |
| 124 | 1.2.3.8 | **PINTURAS** | 20d | 2022-03-28 | 2022-04-19 |  | 10d |
| 125 |  | PINTURA CON ESMALTE EN ZOCALOS | 1d | 2022-04-14 | 2022-04-14 | 110, 129 | 14d |
| 126 |  | PINTURA EN PUERTAS C/BARNIZ 2 MANO | 6d | 2022-03-28 | 2022-04-02 | 112 | 24d |
| 127 |  | PINTURA CON ESMALTE EN TRIBUNAS | 2d | 2022-04-14 | 2022-04-15 | 129 | 13d |
| 128 |  | PINTURA SATINADA EN CIELO RASO | 2d | 2022-04-15 | 2022-04-16 | 132 | 12d |
| 129 |  | PINTURA SATINADA EN EXTERIORES | 4d | 2022-04-09 | 2022-04-13 | 131 | 10d |
| 130 |  | PINTURA SATINADA EN COLUMNAS | 3d | 2022-04-09 | 2022-04-12 | 131 | 12d |
| 131 |  | PINTURA SATINADA EN INTERIORES | 4d | 2022-04-05 | 2022-04-08 | 87 | 10d |
| 132 |  | PINTURA SATINADA EN VIGAS | 2d | 2022-04-13 | 2022-04-14 | 130 | 12d |
| 133 |  | PINTURA SATINADA EN PARAPETOS | 2d | 2022-04-14 | 2022-04-15 | 129 | 10d |
| 134 |  | PINTURA SATINADA EN FONDO DE ESCALERA | 3d | 2022-04-16 | 2022-04-19 | 133 | 10d |
| 135 | 1.2.4 | **INSTALACIONES SANITARIAS** | 46d | 2022-03-03 | 2022-04-25 |  | 5d |
| 136 | 1.2.4.1 | **APARATOS SANITARIOS Y ACCESORIOS** | 7d | 2022-04-18 | 2022-04-25 |  | 5d |
| 137 | 1.2.4.1.1 | **SUMINISTRO DE APARATOS SANITARIOS** | 5d | 2022-04-18 | 2022-04-22 |  | 5d |
| 138 |  | INODORO TANQUE BAJO DE CERÁMICA VITRIFICADA BLANCO | 5d | 2022-04-18 | 2022-04-22 | 100FS-10d | 5d |
| 139 |  | LAVADERO DE ACERO INOXIDABLE 1 POZA CON 2 ESCURRIDORES | 1d | 2022-04-18 | 2022-04-18 | 138SS | 5d |
| 140 | 1.2.4.1.2 | **SUMINISTRO DE ACCESORIOS SANITARIOS** | 4d | 2022-04-18 | 2022-04-21 |  | 5d |

| ID | WBS | Task | Duration | Start | Finish | Predecessors | Total float |
| --- | --- | --- | --- | --- | --- | --- | --- |
| 141 |  | LLAVE DE LAVATORIO TEMPORIZADA, CROMADA | 2d | 2022-04-18 | 2022-04-19 | 139SS | 5d |
| 142 |  | SOPORTE PORTA PAPEL HIGIENICO CROMADO | 1d | 2022-04-18 | 2022-04-18 | 141SS | 5d |
| 143 |  | TACHO DE ACERO INOXIDABLE DE 7L, CON TAPA Y SISTEMA PEDAL | 1d | 2022-04-19 | 2022-04-19 | 142 | 5d |
| 144 |  | DOSIFICADOR DE JABON AUTOMATICO CROMADO-EMPOTRADO | 2d | 2022-04-19 | 2022-04-20 | 143SS | 5d |
| 145 |  | BARRA DE SEGURIDAD DE ACERO INOXIDABLE, L = 0.90m | 1d | 2022-04-19 | 2022-04-19 | 144SS | 5d |
| 146 |  | PORTA JABON CROMADO, ADOSADO | 1d | 2022-04-20 | 2022-04-20 | 145 | 5d |
| 147 |  | ESPEJO BISELADO DE 0.45 x 0.75 m, e=4mm | 2d | 2022-04-20 | 2022-04-21 | 146SS | 5d |
| 148 | 1.2.4.1.3 | **INSTALACION DE APARATOS SANITARIOS** | 3d | 2022-04-22 | 2022-04-25 |  | 5d |
| 149 |  | INSTALACION DE APARATOS SANITARIOS | 3d | 2022-04-22 | 2022-04-25 | 140 | 5d |
| 150 | 1.2.4.1.4 | **INSTALACION DE ACCESORIOS SANITARIOS** | 2d | 2022-04-22 | 2022-04-23 |  | 6d |
| 151 |  | INSTALACION DE ACCESORIOS SANITARIOS | 2d | 2022-04-22 | 2022-04-23 | 149SS | 6d |
| 152 | 1.2.4.2 | **SISTEMA DE AGUA FRIA** | 21d | 2022-03-03 | 2022-03-26 |  | 10d |
| 153 | 1.2.4.2.1 | **SALIDA DE AGUA FRIA** | 4d | 2022-03-03 | 2022-03-07 |  | 10d |
| 154 |  | SALIDA DE AGUA FRIA CON TUBERÍA DE PVC SAP C-10 Ø 1/2" | 4d | 2022-03-03 | 2022-03-07 | 80 | 10d |
| 155 | 1.2.4.2.2 | **REDES DE DISTRIBUCIÓN** | 14d | 2022-03-08 | 2022-03-23 |  | 10d |
| 156 |  | TUBERIA DE PVC C-10 Ø 1/2" SP | 3d | 2022-03-08 | 2022-03-10 | 154 | 10d |
| 157 |  | TUBERIA DE PVC C-10 Ø 3/4" SP | 3d | 2022-03-11 | 2022-03-14 | 156 | 10d |
| 158 |  | TUBERIA DE PVC C-10 Ø 1" SP | 2d | 2022-03-15 | 2022-03-16 | 157 | 10d |
| 159 |  | TUBERIA DE PVC C-10 Ø 1 1/2" SP | 3d | 2022-03-17 | 2022-03-19 | 158 | 10d |
| 160 |  | TUBERIA DE PVC C-10 Ø 2" SP | 3d | 2022-03-21 | 2022-03-23 | 159 | 10d |
| 161 | 1.2.4.2.3 | **ACCESORIOS DE REDES DE AGUA** | 2d | 2022-03-24 | 2022-03-25 | 155 | 10d |
| 162 |  | CODO DE PVC Ø 1/2" x 90° SP | 2d | 2022-03-24 | 2022-03-25 |  | 10d |
| 163 |  | CODO DE PVC Ø 3/4" x 90° SP | 1d | 2022-03-24 | 2022-03-24 |  | 11d |
| 164 |  | CODO DE PVC Ø 1" x 90° SP | 2d | 2022-03-24 | 2022-03-25 |  | 10d |
| 165 |  | CODO DE F°G° Ø 2" x 90° | 1d | 2022-03-24 | 2022-03-24 |  | 11d |
| 166 |  | TEE DE PVC Ø 1/2" SP | 1d | 2022-03-24 | 2022-03-24 |  | 11d |
| 167 |  | TEE DE PVC Ø 3/4" SP | 1d | 2022-03-24 | 2022-03-24 |  | 11d |
| 168 |  | REDUCCION DE PVC Ø 3/4" A 1/2" SP | 1d | 2022-03-24 | 2022-03-24 |  | 11d |
| 169 |  | REDUCCION DE PVC Ø 1" A 3/4" SP | 1d | 2022-03-24 | 2022-03-24 |  | 11d |
| 170 | 1.2.4.2.4 | **VALVULAS** | 1d | 2022-03-26 | 2022-03-26 | 161 | 10d |
| 171 |  | VALVULA COMPUERTA DE BRONCE Ø 1/2" | 1d | 2022-03-26 | 2022-03-26 |  | 10d |
| 172 |  | VALVULA COMPUERTA DE BRONCE Ø 1" | 1d | 2022-03-26 | 2022-03-26 |  | 10d |
| 173 | 1.2.4.3 | **SISTEMA DE DRENAJE PLUVIAL** | 20d | 2022-03-28 | 2022-04-19 | 152 | 10d |
| 174 | 1.2.4.3.1 | **RED DE RAMALES COLECTORES** | 13d | 2022-03-28 | 2022-04-11 |  | 10d |
| 175 |  | CANALETA METALICA DE EVACUACION DE AGUAS PLUVIALES | 1d | 2022-04-02 | 2022-04-02 | 176 | 10d |
| 176 |  | CANAL DE CONCRETO EN TECHO CON IMPERMEABILIZANTE | 5d | 2022-03-28 | 2022-04-01 |  | 10d |
| 177 |  | CANAL DE CONCRETO CON FIBRAS DE ACERO EN TECHO A=30cm, H=30cm, E=10cm | 4d | 2022-04-02 | 2022-04-06 | 176 | 21d |
| 178 |  | MONTANTE DE TUB. PVC SAP C-10 Ø 3" ADOSADA | 4d | 2022-04-04 | 2022-04-07 | 175 | 10d |
| 179 |  | COLUMNETAS DE CONCRETO f'c=175 Kg/cm2 PARA BAJANTES | 3d | 2022-04-08 | 2022-04-11 | 178 | 17d |
| 180 | 1.2.4.3.2 | **RED DE RECOLECCIÓN** | 7d | 2022-04-08 | 2022-04-15 |  | 10d |
| 181 |  | CANAL DE CONCRETO EN PISO A=30CM H=VARIABLE, E=15cm | 2d | 2022-04-08 | 2022-04-09 | 178 | 10d |
| 182 |  | REJILLA METALICA TIPO III A=70cm | 3d | 2022-04-11 | 2022-04-13 | 181 | 10d |
| 183 |  | RED COLECTORA TUBERÍA PVC UF Ø DE 12" INC/EXCAVACIÓN Y RELLENO | 2d | 2022-04-14 | 2022-04-15 | 182 | 10d |
| 184 | 1.2.4.3.3 | **ACCESORIOS** | 3d | 2022-04-16 | 2022-04-19 | 180 | 10d |
| 185 |  | SUMIDERO SIFONICO DE ACERO INOXIDABLE | 1d | 2022-04-16 | 2022-04-16 |  | 12d |
| 186 |  | ABRAZADERA DE FIJACION DE MONTANTE TUBO DE 3" | 3d | 2022-04-16 | 2022-04-19 |  | 10d |
| 187 |  | SOPORTE METALICO DE CANALETAS DE 15 cm | 2d | 2022-04-16 | 2022-04-18 |  | 11d |
| 188 | 1.2.4.4 | **SISTEMA DE DESAGUE Y VENTILACION** | 22d | 2022-03-08 | 2022-04-01 | 153 | 25d |
| 189 | 1.2.4.4.1 | **SALIDA DE DESAGUE** | 17d | 2022-03-08 | 2022-03-26 |  | 25d |
| 190 |  | SALIDA DE DESAGUE Ø 2" | 4d | 2022-03-08 | 2022-03-11 |  | 25d |
| 191 |  | SALIDA DE DESAGUE Ø 3" | 3d | 2022-03-12 | 2022-03-15 | 190 | 25d |
| 192 |  | SALIDA DE DESAGUE Ø 4" | 5d | 2022-03-16 | 2022-03-21 | 191 | 30d |
| 193 |  | SALIDA DE VENTILACIÓN Ø 2" | 5d | 2022-03-22 | 2022-03-26 | 192 | 30d |
| 194 | 1.2.4.4.2 | **REDES DE DERIVACIÓN** | 5d | 2022-03-16 | 2022-03-21 | 191 | 25d |
| 195 |  | TUBERIA PVC SAL Ø 3" | 1d | 2022-03-16 | 2022-03-16 |  | 25d |
| 196 |  | TUBERIA PVC SAL Ø 4" | 3d | 2022-03-17 | 2022-03-19 | 195 | 25d |
| 197 |  | TUBERIA DE VENTILACIÓN PVC SAL Ø 2" | 1d | 2022-03-21 | 2022-03-21 | 196 | 25d |
| 198 | 1.2.4.4.3 | **REDES COLECTORAS** | 8d | 2022-03-22 | 2022-03-30 | 194 | 25d |
| 199 |  | TUBERÍA PVC UF Ø DE 6" | 2d | 2022-03-22 | 2022-03-23 |  | 25d |
| 200 |  | RED DE EMPLAME TUBERÍA PVC UF Ø DE 6" EXTERIORES CON REPOSIION DE VEREDAS | 6d | 2022-03-24 | 2022-03-30 | 199 | 25d |
| 201 | 1.2.4.4.4 | **ACCESORIOS DE REDES DE DESAGUE** | 2d | 2022-03-22 | 2022-03-23 | 194 | 33d |
| 202 |  | CODO DE PVC SAL Ø 2" x 45° | 1d | 2022-03-22 | 2022-03-22 |  | 34d |
| 203 |  | YEE DE PVC Ø 2" | 2d | 2022-03-22 | 2022-03-23 |  | 33d |
| 204 |  | YEE CON REDUCCIÓN DE PVC Ø 3" A 2" | 1d | 2022-03-22 | 2022-03-22 |  | 34d |
| 205 |  | YEE CON REDUCCIÓN DE PVC Ø 4" A 3" | 1d | 2022-03-22 | 2022-03-22 |  | 34d |
| 206 |  | REDUCCIÓN DE PVC Ø 3" A 2" | 1d | 2022-03-22 | 2022-03-22 |  | 34d |
| 207 |  | REDUCCIÓN DE PVC Ø 4" A 2" | 1d | 2022-03-22 | 2022-03-22 |  | 34d |
| 208 |  | SUMIDEROS Ø 3" | 2d | 2022-03-22 | 2022-03-23 |  | 33d |
| 209 |  | REGISTRO ROSCADO Ø 4" | 2d | 2022-03-22 | 2022-03-23 |  | 33d |
| 210 |  | SOMBRERO DE VENTILACIÓN DE Ø 2" | 1d | 2022-03-22 | 2022-03-22 |  | 34d |

| ID | WBS | Task | Duration | Start | Finish | Predecessors | Total float |
| --- | --- | --- | --- | --- | --- | --- | --- |
| 211 | 1.2.4.4.5 | **CAMARAS DE INSPECCIÓN** | 2d | 2022-03-31 | 2022-04-01 | 198 | 25d |
| 212 |  | BUZONETAS DE D=0.60M E=0.15M H=VARIABLE | 2d | 2022-03-31 | 2022-04-01 |  | 25d |
| 213 |  | BUZON TIPO I DE D=1.20M E=0.15M H=1.20 | 2d | 2022-03-31 | 2022-04-01 |  | 25d |
| 214 |  | BUZON TIPO II DE D=1.20M E=0.15M H>3.00M | 1d | 2022-03-31 | 2022-03-31 |  | 26d |
| 215 | 1.2.5 | **INSTALACIONES ELECTRICAS** | 36d | 2022-03-03 | 2022-04-13 |  | 15d |
| 216 | 1.2.5.1 | **INSTALACION DE POZO A TIERRA** | 9d | 2022-03-03 | 2022-03-12 |  | 15d |
| 217 |  | POZO A TIERRA | 6d | 2022-03-03 | 2022-03-09 | 80 | 15d |
| 218 |  | CAJA DE REGISTRO PARA POZO A TIERRA CON TAPA DE C°( SEGÚN DISEÑO) | 3d | 2022-03-10 | 2022-03-12 | 217 | 15d |
| 219 | 1.2.5.2 | **ALIMENTADORES** | 11d | 2022-03-10 | 2022-03-22 |  | 34d |
| 220 | 1.2.5.2.1 | **INTERRUPTORES TERMOMAGNETICOS** | 11d | 2022-03-10 | 2022-03-22 |  | 34d |
| 221 |  | INTERRUPTOR TERMOMAGNETICO DE 3x50 A, 220V | 1d | 2022-03-10 | 2022-03-10 | 217 | 34d |
| 222 |  | INTERRUPTOR TERMOMAGNETICO DE 3x30 A, 220V | 2d | 2022-03-11 | 2022-03-12 | 221 | 34d |
| 223 |  | INTERRUPTOR TERMOMAGNETICO DE 2x30 A, 220V | 2d | 2022-03-14 | 2022-03-15 | 222 | 34d |
| 224 |  | INTERRUPTOR TERMOMAGNETICO DE 2x20 A, 220V | 1d | 2022-03-16 | 2022-03-16 | 223 | 34d |
| 225 |  | INTERRUPTOR TERMOMAGNETICO DE 2x15 A, 220V | 2d | 2022-03-17 | 2022-03-18 | 224 | 34d |
| 226 |  | INTERRUPTOR TERMOMAGNETICO DIFERENCIAL DE 2x25 A, 220V | 3d | 2022-03-19 | 2022-03-22 | 225 | 34d |
| 227 | 1.2.5.2.2 | **DUCTOS Y TUBERIAS** | 5d | 2022-03-10 | 2022-03-15 |  | 38d |
| 228 |  | TUBERIA PVC SAP-P Ø 25mm | 5d | 2022-03-10 | 2022-03-15 | 217 | 38d |
| 229 |  | CURVAS PVC SAP-P Ø 25mm | 3d | 2022-03-10 | 2022-03-12 | 228SS | 42d |
| 230 |  | UNIÓNes PVC SAP-P Ø 25mm | 3d | 2022-03-10 | 2022-03-12 | 228SS | 42d |
| 231 | 1.2.5.2.3 | **CONDUCTORES Y CABLES** | 2d | 2022-03-16 | 2022-03-17 |  | 38d |
| 232 |  | TENDIDO DE CABLE N2XOH DE 6mm² | 2d | 2022-03-16 | 2022-03-17 | 228 | 38d |
| 233 | 1.2.5.3 | **ALUMBRADO** | 30d | 2022-03-10 | 2022-04-13 |  | 15d |
| 234 | 1.2.5.3.1 | **DUCTOS Y TUBERIAS** | 8d | 2022-03-14 | 2022-03-22 |  | 15d |
| 235 |  | TUBERIA CONDUIT METALICA EMT Ø 19 mm | 2d | 2022-03-14 | 2022-03-15 | 218 | 15d |
| 236 |  | TUBERIA PVC SAP-P Ø 19mm | 5d | 2022-03-16 | 2022-03-21 | 235 | 20d |
| 237 |  | CURVAS PVC SAP-P Ø 19mm | 6d | 2022-03-16 | 2022-03-22 | 236SS | 34d |
| 238 | 1.2.5.3.2 | **CONDUCTORES Y CABLES** | 13d | 2022-03-16 | 2022-03-30 |  | 15d |
| 239 |  | TENDIDO DE CABLE LSOHX-90 DE 2.5mm² | 13d | 2022-03-16 | 2022-03-30 | 235 | 15d |
| 240 | 1.2.5.3.3 | **SALIDA PARA CENTROS DE LUZ** | 20d | 2022-03-22 | 2022-04-13 |  | 15d |
| 241 |  | SALIDA PARA CENTRO DE LUZ | 12d | 2022-03-31 | 2022-04-13 | 239 | 15d |
| 242 |  | CAJA RECTANGULAR DE F°G° DE 100X55X40mm | 10d | 2022-03-22 | 2022-04-01 | 236 | 20d |
| 243 | 1.2.5.3.4 | **INTERRUPTORES** | 7d | 2022-03-16 | 2022-03-23 |  | 33d |
| 244 |  | SALIDA PARA INTERRUPTOR SIMPLE, INCLUYE INSTALACION DE INTERRUPTOR | 2d | 2022-03-16 | 2022-03-17 | 235 | 33d |
| 245 |  | SALIDA PARA INTERRUPTOR DOBLE, INCLUYE INSTALACION DE INTERRUPTOR | 4d | 2022-03-18 | 2022-03-22 | 244 | 33d |
| 246 |  | SALIDA PARA INTERRUPTOR TRIPLE, INCLUYE INSTALACION DE INTERRUPTOR | 1d | 2022-03-23 | 2022-03-23 | 245 | 33d |
| 247 | 1.2.5.3.5 | **CAJAS METALICAS CON TAPA** | 5d | 2022-04-02 | 2022-04-07 |  | 20d |
| 248 |  | INSTALACION DE CAJA DE PASO TIPO 1 DE 100x100x75 mm | 5d | 2022-04-02 | 2022-04-07 | 242 | 20d |
| 249 | 1.2.5.3.6 | **SUMINISTRO E INSTALACION DE POSTES** | 1d | 2022-03-10 | 2022-03-10 |  | 36d |
| 250 |  | POSTE METALICO F°G° TUBULAR DE 6m DE 102 mm de Ø | 1d | 2022-03-10 | 2022-03-10 | 217 | 36d |
| 251 |  | APERTURA DE HOYO, IZAJE Y CIMENTACION DE POSTE DE F°G° 6.00mts | 1d | 2022-03-10 | 2022-03-10 | 250SS | 44d |
| 252 | 1.2.5.3.7 | **SALIDA PARA REFLECTORES** | 3d | 2022-03-11 | 2022-03-14 |  | 36d |
| 253 |  | SALIDA PARA CENTRO DE FAROLA EN POSTE | 3d | 2022-03-11 | 2022-03-14 | 250 | 36d |
| 254 | 1.2.5.4 | **TOMACORRIENTES Y ARTEFACTOS DE EMERGENCIA** | 5d | 2022-03-15 | 2022-03-19 |  | 36d |
| 255 | 1.2.5.4.1 | **CONDUCTORES Y CABLES** | 5d | 2022-03-15 | 2022-03-19 |  | 36d |
| 256 |  | TENDIDO DE CABLE LSOHX-90 DE 4mm² | 5d | 2022-03-15 | 2022-03-19 | 253 | 36d |
| 257 |  | Termino de Obra | 0d | 2022-02-19 | 2022-02-19 |  | 61d |

## Version 2 (saved 2022-06-13)

Note of the change: hjgjh

Last finish stays 2022-04-30.

Added:

| ID | Task | Duration | Start | Finish | Predecessors | Constraint |
| --- | --- | --- | --- | --- | --- | --- |
| 226 | INTERRUPTOR TERMOMAGNETICO DE 3X60 A, 220V | 2d | 2022-03-24 | 2022-03-25 | 225 | start no earlier than 2022-03-23 |
| 227 | INTERRUPTOR TERMOMAGNETICO DE 3X40 A, 220V | 2d | 2022-03-26 | 2022-03-28 | 226 |  |

Removed: 244 SALIDA PARA INTERRUPTOR SIMPLE, INCLUYE INSTALACION DE INTERRUPTOR; 246 SALIDA PARA INTERRUPTOR TRIPLE, INCLUYE INSTALACION DE INTERRUPTOR

Changed:

| ID | Task | Start | Finish | Duration | Total float | Predecessors |
| --- | --- | --- | --- | --- | --- | --- |
| 1 | **"MEJORAMIENTO DEL SERVICIO EDUCATIVO EN LA IEP N 54002 SANTA ROSA E IES SANTA ROSA DEL DISTRITO DE ABANCAY, PROVINCIA DE ABANCAY -** |  |  | 61d → 61d? |  |  |
| 3 | **MAYORES METRADOS** |  |  | 61d → 61d? |  |  |
| 215 | **INSTALACIONES ELECTRICAS** |  | 2022-04-13 → 2022-04-27 (+14d) | 36d → 48d? | 15d → none |  |
| 216 | **INSTALACION DE POZO A TIERRA** |  | 2022-03-12 → 2022-03-18 (+6d) | 9d → 14d | 15d → 10d |  |
| 217 | POZO A TIERRA |  | 2022-03-09 → 2022-03-12 (+3d) | 6d → 9d | 15d → 10d |  |
| 218 | CAJA DE REGISTRO PARA POZO A TIERRA CON TAPA DE C°( SEGÚN DISEÑO) | 2022-03-10 → 2022-03-14 (+4d) | 2022-03-12 → 2022-03-18 (+6d) | 3d → 5d | 15d → 10d |  |
| 219 | **ALIMENTADORES** | 2022-03-10 → 2022-03-14 (+4d) | 2022-03-22 → 2022-03-31 (+9d) | 11d → 16d | 34d → 26d |  |
| 220 | **INTERRUPTORES TERMOMAGNETICOS** | 2022-03-10 → 2022-03-14 (+4d) | 2022-03-22 → 2022-03-31 (+9d) | 11d → 16d | 34d → 26d |  |
| 221 | INTERRUPTOR TERMOMAGNETICO DE 3x50 A, 220V | 2022-03-10 → 2022-03-14 (+4d) | 2022-03-10 → 2022-03-14 (+4d) |  | 34d → 26d |  |
| 222 | INTERRUPTOR TERMOMAGNETICO DE 3x30 A, 220V | 2022-03-11 → 2022-03-15 (+4d) | 2022-03-12 → 2022-03-16 (+4d) |  | 34d → 26d |  |
| 223 | INTERRUPTOR TERMOMAGNETICO DE 2x30 A, 220V | 2022-03-14 → 2022-03-17 (+3d) | 2022-03-15 → 2022-03-18 (+3d) |  | 34d → 26d |  |
| 224 | INTERRUPTOR TERMOMAGNETICO DE 2x20 A, 220V | 2022-03-16 → 2022-03-19 (+3d) | 2022-03-16 → 2022-03-19 (+3d) |  | 34d → 26d |  |
| 225 | INTERRUPTOR TERMOMAGNETICO DE 2x15 A, 220V | 2022-03-17 → 2022-03-21 (+4d) | 2022-03-18 → 2022-03-23 (+5d) | 2d → 3d | 34d → 26d |  |
| 228 | INTERRUPTOR TERMOMAGNETICO DIFERENCIAL DE 2x25 A, 220V | 2022-03-19 → 2022-03-29 (+10d) | 2022-03-22 → 2022-03-31 (+9d) |  | 34d → 26d | 225 → 225, 227 |
| 229 | **DUCTOS Y TUBERIAS** | 2022-03-10 → 2022-03-14 (+4d) | 2022-03-15 → 2022-03-18 (+3d) |  | 38d → 35d |  |
| 230 | TUBERIA PVC SAP-P Ø 25mm | 2022-03-10 → 2022-03-14 (+4d) | 2022-03-15 → 2022-03-18 (+3d) |  | 38d → 35d |  |
| 231 | CURVAS PVC SAP-P Ø 25mm | 2022-03-10 → 2022-03-14 (+4d) | 2022-03-12 → 2022-03-16 (+4d) |  | 42d → 39d |  |
| 232 | UNIÓNes PVC SAP-P Ø 25mm | 2022-03-10 → 2022-03-14 (+4d) | 2022-03-12 → 2022-03-16 (+4d) |  | 42d → 39d |  |
| 233 | **CONDUCTORES Y CABLES** | 2022-03-16 → 2022-03-19 (+3d) | 2022-03-17 → 2022-03-21 (+4d) |  | 38d → 35d |  |
| 234 | TENDIDO DE CABLE N2XOH DE 6mm² | 2022-03-16 → 2022-03-19 (+3d) | 2022-03-17 → 2022-03-21 (+4d) |  | 38d → 35d |  |
| 235 | **ALUMBRADO** | 2022-03-10 → 2022-03-03 (-7d) | 2022-04-13 → 2022-04-20 (+7d) | 30d → 42d | 15d → none |  |
| 236 | **DUCTOS Y TUBERIAS** | 2022-03-14 → 2022-03-19 (+5d) | 2022-03-22 → 2022-03-28 (+6d) |  | 15d → 10d |  |
| 237 | TUBERIA CONDUIT METALICA EMT Ø 19 mm | 2022-03-14 → 2022-03-19 (+5d) | 2022-03-15 → 2022-03-21 (+6d) |  | 15d → 10d |  |
| 238 | TUBERIA PVC SAP-P Ø 19mm | 2022-03-16 → 2022-03-22 (+6d) | 2022-03-21 → 2022-03-26 (+5d) |  | 20d → 15d |  |
| 239 | CURVAS PVC SAP-P Ø 19mm | 2022-03-16 → 2022-03-22 (+6d) | 2022-03-22 → 2022-03-28 (+6d) |  | 34d → 29d |  |
| 240 | **CONDUCTORES Y CABLES** | 2022-03-16 → 2022-03-22 (+6d) | 2022-03-30 → 2022-04-05 (+6d) |  | 15d → 10d |  |
| 241 | TENDIDO DE CABLE LSOHX-90 DE 2.5mm² | 2022-03-16 → 2022-03-22 (+6d) | 2022-03-30 → 2022-04-05 (+6d) |  | 15d → 10d |  |
| 242 | **SALIDA PARA CENTROS DE LUZ** | 2022-03-22 → 2022-03-28 (+6d) | 2022-04-13 → 2022-04-19 (+6d) |  | 15d → 10d |  |
| 243 | SALIDA PARA CENTRO DE LUZ | 2022-03-31 → 2022-04-06 (+6d) | 2022-04-13 → 2022-04-19 (+6d) |  | 15d → 10d |  |
| 244 | CAJA RECTANGULAR DE F°G° DE 100X55X40mm | 2022-03-22 → 2022-03-28 (+6d) | 2022-04-01 → 2022-04-07 (+6d) |  | 20d → 15d |  |
| 245 | **INTERRUPTORES** | 2022-03-16 → 2022-03-03 (-13d) | 2022-03-23 → 2022-03-07 (-16d) | 7d → 4d | 33d → 47d |  |
| 246 | SALIDA PARA INTERRUPTOR DOBLE, INCLUYE INSTALACION DE INTERRUPTOR | 2022-03-18 → 2022-03-03 (-15d) | 2022-03-22 → 2022-03-07 (-15d) |  | 33d → 47d | SALIDA PARA INTERRUPTOR SIMPLE, INCLUYE INSTALACION DE INTERRUPTOR → none |
| 247 | **CAJAS METALICAS CON TAPA** | 2022-04-02 → 2022-04-08 (+6d) | 2022-04-07 → 2022-04-13 (+6d) |  | 20d → 15d |  |
| 248 | INSTALACION DE CAJA DE PASO TIPO 1 DE 100x100x75 mm | 2022-04-02 → 2022-04-08 (+6d) | 2022-04-07 → 2022-04-13 (+6d) |  | 20d → 15d |  |
| 249 | **SUMINISTRO E INSTALACION DE POSTES** | 2022-03-10 → 2022-03-14 (+4d) | 2022-03-10 → 2022-03-14 (+4d) |  | 36d → 33d |  |
| 250 | POSTE METALICO F°G° TUBULAR DE 6m DE 102 mm de Ø | 2022-03-10 → 2022-03-14 (+4d) | 2022-03-10 → 2022-03-14 (+4d) |  | 36d → 33d |  |
| 251 | APERTURA DE HOYO, IZAJE Y CIMENTACION DE POSTE DE F°G° 6.00mts | 2022-03-10 → 2022-03-14 (+4d) | 2022-03-10 → 2022-03-14 (+4d) |  | 44d → 41d |  |
| 252 | **SALIDA PARA REFLECTORES** | 2022-03-11 → 2022-03-15 (+4d) | 2022-03-14 → 2022-03-17 (+3d) |  | 36d → 33d |  |
| 253 | SALIDA PARA CENTRO DE FAROLA EN POSTE | 2022-03-11 → 2022-03-15 (+4d) | 2022-03-14 → 2022-03-17 (+3d) |  | 36d → 33d |  |
| 254 | **TOMACORRIENTES Y ARTEFACTOS DE EMERGENCIA** | 2022-03-15 → 2022-03-18 (+3d) | 2022-03-19 → 2022-03-23 (+4d) |  | 36d → 33d |  |
| 255 | **CONDUCTORES Y CABLES** | 2022-03-15 → 2022-03-18 (+3d) | 2022-03-19 → 2022-03-23 (+4d) |  | 36d → 33d |  |
| 256 | TENDIDO DE CABLE LSOHX-90 DE 4mm² | 2022-03-15 → 2022-03-18 (+3d) | 2022-03-19 → 2022-03-23 (+4d) |  | 36d → 33d |  |
