# PROGRAMACION GANTT FINAL

How a schedule from MS Project changed from version to version. A marks actual dates.

## Version 1 (saved 2022-04-01)

Note of the change: CREAR

| ID | WBS | Task | Duration | Start | Finish | Predecessors | Total float |
| --- | --- | --- | --- | --- | --- | --- | --- |
| 1 | 1 | **"MEJORAMIENTO DEL SERVICIO EDUCATIVO EN LA IEP N 54002 SANTA ROSA E IES SANTA ROSA DEL DISTRITO DE ABANCAY, PROVINCIA DE ABANCAY -** | 61d | 2022-02-19 | 2022-04-30 |  | 0d |
| 2 |  | Inicio de Obra | 0d | 2022-02-19 | 2022-02-19 |  | 61d |
| 3 | 1.2 | **ADICIONAL PARTIDAS NUEVAS** | 61d | 2022-02-19 | 2022-04-30 |  | 0d |
| 4 | 1.2.1 | **OBRAS PROVISIONALES, TRABAJOS PRELIMINARES, SEGURIDAD Y SALUD** | 61d | 2022-02-19 | 2022-04-30 |  | 0d |
| 5 | 1.2.1.1 | **SEGURIDAD Y SALUD** | 29d | 2022-02-19 | 2022-03-24 |  | 0d |
| 6 |  | EQUIPOS DE PROTECCIÓN INDIVIDUAL COMPLEMENTARIOS | 29d | 2022-02-19 | 2022-03-24 |  | 0d |
| 7 | 1.2.1.2 | **OBRAS DE TRABAJOS PRELIMINARES** | 61d | 2022-02-19 | 2022-04-30 |  | 0d |
| 8 |  | LIMPIEZA DE JUNTAS DE PORCELANATO PARA FRAGUA | 8d | 2022-03-14 | 2022-03-22 | 11 | 34d |
| 9 |  | DESCASCARAMIENTO DE TARRAJEO EXISTENTE | 6d | 2022-02-19 | 2022-02-25 | 6SS | 34d |
| 10 |  | DEMOLICION DE CONTRAPISO EXISTENTE E=5 cm | 5d | 2022-02-26 | 2022-03-03 | 9 | 34d |
| 11 |  | ELIMINACION DE DESMONTE PROVENIENTE DE DEMOLICION | 8d | 2022-03-04 | 2022-03-12 | 10 | 34d |
| 12 |  | LIJADO DE MURO EN PINTURA EXISTENTE | 20d | 2022-02-19 | 2022-03-14 | 6SS | 41d |
| 13 |  | MONTANJE Y DESMONTAJE DE ANDAMIO PARA PINTURA EN EXTERIOR | 61d | 2022-02-19 | 2022-04-30 | 6SS | 0d |
| 14 | 1.2.1.3 | **TRASLADO INTERNO EN OBRA** | 7d | 2022-03-01 | 2022-03-08 |  | 46d |
| 15 |  | ACARREO DE MEZCLA DE CONCRETO | 7d | 2022-03-01 | 2022-03-08 | 27 | 46d |
| 16 | 1.2.2 | **ARQUITECTURA** | 42d | 2022-02-19 | 2022-04-08 |  | 0d |
| 17 | 1.2.2.1 | **MUROS Y TABIQUES** | 6d | 2022-02-19 | 2022-02-25 |  | 0d |
| 18 |  | MURO DE ALUMINIO COMPUESTO E=15cm | 6d | 2022-02-19 | 2022-02-25 | 6SS | 0d |
| 19 | 1.2.2.2 | **REVOQUES ENLUCIDOS Y MOLDURAS** | 7d | 2022-02-19 | 2022-02-26 |  | 54d |
| 20 |  | TARRAJEO EN COLUMNAS CIRCULARES | 6d | 2022-02-19 | 2022-02-25 | 18SS | 54d |
| 21 |  | SOLAQUEO EN VIGAS DE LOSA NERVADA | 7d | 2022-02-19 | 2022-02-26 | 20SS | 54d |
| 22 | 1.2.2.3 | **PISOS Y PAVIMENTOS** | 6d | 2022-02-26 | 2022-03-04 |  | 0d |
| 23 | 1.2.2.3.1 | **PISOS** | 4d | 2022-03-01 | 2022-03-04 |  | 0d |
| 24 |  | PISO DE CEMENTO PULIDO COLOREADO | 2d | 2022-03-01 | 2022-03-02 | 27 | 0d |
| 25 |  | REVESTIMIENTO DE PEDELTAL CON TERRAZO PULIDO | 2d | 2022-03-03 | 2022-03-04 | 24 | 0d |
| 26 | 1.2.2.3.2 | **SARDINELES** | 5d | 2022-02-26 | 2022-03-03 |  | 0d |
| 27 |  | SARDINEL DE CONCRETO CON ACABADO FROTACHADO Y PINTADO DE 0.10X1.00M | 2d | 2022-02-26 | 2022-02-28 | 18 | 0d |
| 28 |  | SARDINEL DE CONCRETO CON ACABADO FROTACHADO DE 0.10X0.60M | 2d | 2022-03-01 | 2022-03-02 | 27 | 1d |
| 29 |  | SARDINEL DE CONCRETO CON ACABADO FROTACHADO DE 0.10X0.80M | 1d | 2022-03-03 | 2022-03-03 | 28 | 1d |
| 30 | 1.2.2.4 | **ZOCALOS Y CONTRAZOCALOS** | 7d | 2022-02-26 | 2022-03-05 |  | 27d |
| 31 | 1.2.2.4.1 | **CONTRAZOCALOS** | 7d | 2022-02-26 | 2022-03-05 |  | 27d |
| 32 |  | CONTRAZOCALO VINILICO SPC DE 8cm | 2d | 2022-02-26 | 2022-02-28 | 18 | 27d |
| 33 |  | CONTRAZOCALO SANITARIO DE CEMENTO PULIDO C/MORTERO 1:5 DE 2CM, H=10CM | 5d | 2022-03-01 | 2022-03-05 | 32 | 27d |
| 34 | 1.2.2.5 | **COBERTURA** | 3d | 2022-03-07 | 2022-03-09 |  | 27d |
| 35 |  | COBERTURA C/LADRILLO PASTELERO | 2d | 2022-03-07 | 2022-03-08 | 18, 33 | 27d |
| 36 |  | COBERTURA DE POLICARBONATO SOLIDO Y TUBO DE ACERO LAC | 1d | 2022-03-09 | 2022-03-09 | 35 | 27d |
| 37 | 1.2.2.6 | **CARPINTERIA METALICA Y HERRERIA** | 11d | 2022-03-10 | 2022-03-22 |  | 27d |
| 38 | 1.2.2.6.1 | **CARPINTERIA DE FIERRO** | 11d | 2022-03-10 | 2022-03-22 |  | 27d |
| 39 |  | SUMINISTRO E INSTALACION DE REJA DE ACERO GALVANIZADO DE 3" | 4d | 2022-03-10 | 2022-03-14 | 36 | 27d |
| 40 |  | PUERTA METALICA | 4d | 2022-03-15 | 2022-03-18 | 39 | 27d |
| 41 |  | PUERTA CORTAFUEGO (INCL. INSTALACION Y ACCESORIOS) | 1d | 2022-03-19 | 2022-03-19 | 40 | 27d |
| 42 |  | VENTANA DE REJA METALICA | 2d | 2022-03-21 | 2022-03-22 | 41 | 27d |
| 43 | 1.2.2.7 | **CERRAJERIA** | 4d | 2022-03-09 | 2022-03-12 |  | 42d |
| 44 |  | FRENO HIDRAULICO DE PISO PARA MAMPARAS | 1d | 2022-03-09 | 2022-03-09 | 35 | 42d |
| 45 |  | FRENO HIDRAULICO AEREO PARA PUERTAS DE MADERA | 3d | 2022-03-10 | 2022-03-12 | 44 | 42d |
| 46 | 1.2.2.8 | **JUNTAS** | 7d | 2022-03-23 | 2022-03-30 |  | 27d |
| 47 |  | SELLADO DE JUNTAS CON POLIURETANO | 7d | 2022-03-23 | 2022-03-30 | 37 | 27d |
| 48 | 1.2.2.9 | **PINTURAS** | 30d | 2022-03-05 | 2022-04-08 |  | 19d |
| 49 |  | EMPASTADO EN MUROS INTERIORES | 15d | 2022-03-05 | 2022-03-22 | 23 | 19d |
| 50 |  | EMPASTADO EN MUROS EXTERIORES | 9d | 2022-03-09 | 2022-03-18 | 49FS-12d | 19d |
| 51 |  | EMPASTADO DE SUPERF. COLUMNAS INCL. ARISTAS | 15d | 2022-03-14 | 2022-03-30 | 50FS-5d | 19d |
| 52 |  | EMPASTADO DE SUPERF. VIGAS INCL. ARISTAS | 8d | 2022-03-17 | 2022-03-25 | 51FS-12d | 19d |
| 53 |  | EMPASTADO EN VESTIDURA DE DERRAMES | 5d | 2022-03-22 | 2022-03-26 | 52FS-4d | 19d |
| 54 |  | EMPASTADO EN CIELORRASOS | 16d | 2022-03-22 | 2022-04-08 | 53SS | 19d |
| 55 | 1.2.2.10 | **OTROS** | 25d | 2022-03-01 | 2022-03-29 |  | 28d |
| 56 |  | PERFIL DE ALUMINIO CURVO EN ZOCALOS CONTRAZOCALOS Y MESAS | 11d | 2022-03-01 | 2022-03-12 | 32 | 28d |
| 57 |  | CANTONERA DE ALUMINIO PARA GRADAS | 3d | 2022-03-14 | 2022-03-16 | 56 | 28d |
| 58 |  | ESCUDO INSTITUCIONAL DE ALUMINIO. | 1d | 2022-03-17 | 2022-03-17 | 57 | 28d |
| 59 |  | PINTURA SATINADA PARA MURAL | 6d | 2022-03-18 | 2022-03-24 | 58 | 28d |
| 60 |  | CAMPANA H=0.60M | 1d | 2022-03-25 | 2022-03-25 | 59 | 28d |
| 61 |  | CRUZ DE ALUMINIO TEXTURIZADO EN INTERIOR Y EXTERIOR 1.80X3.00M | 2d | 2022-03-26 | 2022-03-28 | 60 | 28d |
| 62 |  | ESTATUA DE SANTA ROSA H=2.20 | 1d | 2022-03-29 | 2022-03-29 | 61 | 28d |
| 63 | 1.2.3 | **INSTALACIONES SANITARIAS** | 49d | 2022-03-05 | 2022-04-30 |  | 0d |
| 64 | 1.2.3.1 | **APARATOS SANITARIOS Y ACCESORIOS** | 2d | 2022-03-07 | 2022-03-08 |  | 46d |
| 65 | 1.2.3.1.1 | **SUMINISTRO DE ACCESORIOS SANITARIOS** | 2d | 2022-03-07 | 2022-03-08 |  | 46d |
| 66 |  | MODULO DE BEBEDERO DE AGUA | 2d | 2022-03-07 | 2022-03-08 | 69 | 46d |
| 67 | 1.2.3.2 | **SISTEMA DE AGUA FRIA REPOSICION** | 16d | 2022-03-05 | 2022-03-23 |  | 0d |
| 68 | 1.2.3.2.1 | **TRABAJOS PRELIMINARES** | 2d | 2022-03-05 | 2022-03-07 |  | 0d |
| 69 |  | LIMPIEZA DE TERRENO MANUAL | 1d | 2022-03-05 | 2022-03-05 | 22 | 0d |
| 70 |  | TRAZO Y REPLANTEO PRELIMINAR.. | 1d | 2022-03-07 | 2022-03-07 | 69 | 33d |

| ID | WBS | Task | Duration | Start | Finish | Predecessors | Total float |
| --- | --- | --- | --- | --- | --- | --- | --- |
| 71 | 1.2.3.2.2 | **REMOCIONES** | 1d | 2022-03-07 | 2022-03-07 |  | 46d |
| 72 |  | DEMOLICIÓN DE PISO DE CONCRETO | 1d | 2022-03-07 | 2022-03-07 | 69 | 46d |
| 73 | 1.2.3.2.3 | **ELIMINACION DE MATERIAL PROVENIENTE DE DEMOLICION** | 1d | 2022-03-08 | 2022-03-08 |  | 46d |
| 74 |  | ELIMINACION DE DESMONTE PROVENIENTE DE DEMOLICIONES C/EQUIPO | 1d | 2022-03-08 | 2022-03-08 | 72 | 46d |
| 75 | 1.2.3.2.4 | **MOVIMIENTO DE TIERRAS** | 14d | 2022-03-08 | 2022-03-23 |  | 33d |
| 76 |  | EXCAVACIÓN MANUAL EN TERRENO NORMAL PARA TUBERIAS | 3d | 2022-03-08 | 2022-03-10 | 70 | 33d |
| 77 |  | RELLENO Y COMPACTADO CON MATERIAL SELECCIONADO PARA INSTALACION DE TUBERIA | 3d | 2022-03-16 | 2022-03-18 | 83 | 33d |
| 78 |  | REFINE Y NIVELACION DE ZANJA EN TERRENO NORMAL PARA TUBERIAS | 2d | 2022-03-11 | 2022-03-12 | 76 | 33d |
| 79 |  | ACARREO MANUAL DE TUBERÍAS(D=60m) | 1d | 2022-03-14 | 2022-03-14 | 78 | 33d |
| 80 |  | ACARREO MANUAL INTERNO DE MATERIAL EXCEDENTE PROVENIENTE DE EXCAVACIONES | 3d | 2022-03-19 | 2022-03-22 | 77 | 33d |
| 81 |  | ELIMINACIÓN DE MATERIAL EXCEDENTE | 1d | 2022-03-23 | 2022-03-23 | 80 | 33d |
| 82 | 1.2.3.2.5 | **RED DE DISTRIBUCION** | 1d | 2022-03-15 | 2022-03-15 |  | 33d |
| 83 |  | SUMINISTRO E INSTALACION DE TUBERIA PVC SAP C-10 Ø 1" | 1d | 2022-03-15 | 2022-03-15 | 79 | 33d |
| 84 | 1.2.3.2.6 | **ACCESORIOS DE REDES DE AGUA** | 1d | 2022-03-16 | 2022-03-16 | 83 | 39d |
| 85 |  | CODO DE PVC Ø 1" x 90° SP | 1d | 2022-03-16 | 2022-03-16 |  | 39d |
| 86 |  | UNIÓN PVC SAP Ø 1" | 1d | 2022-03-16 | 2022-03-16 |  | 39d |
| 87 | 1.2.3.3 | **SISTEMA DE DRENAJE PLUVIAL** | 48d | 2022-03-07 | 2022-04-30 |  | 0d |
| 88 | 1.2.3.3.1 | **TRABAJOS PRELIMINARES** | 2d | 2022-03-07 | 2022-03-08 |  | 0d |
| 89 |  | LIMPIEZA DE TERRENO MANUAL | 1d | 2022-03-07 | 2022-03-07 | 69 | 0d |
| 90 |  | TRAZO Y REPLANTEO PRELIMINAR.. | 1d | 2022-03-08 | 2022-03-08 | 89 | 0d |
| 91 | 1.2.3.3.2 | **REMOCIONES** | 4d | 2022-03-08 | 2022-03-11 |  | 43d |
| 92 |  | DEMOLICIÒN DE CANAL EXISTENTE | 2d | 2022-03-08 | 2022-03-09 | 89 | 43d |
| 93 |  | DEMOLICIÓN DE PISO DE CONCRETO | 2d | 2022-03-10 | 2022-03-11 | 92 | 43d |
| 94 | 1.2.3.3.3 | **REPOSICIONES** | 2d | 2022-04-26 | 2022-04-27 |  | 3d |
| 95 |  | REPOSICIÓN DE PISO DE CONCRETO ACABADO FROTACHADO | 1d | 2022-04-26 | 2022-04-26 | 136 | 3d |
| 96 |  | REPOSICIÓN DE PISO CON PORCELANATO 60X60 CM | 1d | 2022-04-27 | 2022-04-27 | 95 | 3d |
| 97 | 1.2.3.3.4 | **ELIMINACIÒN DE MATERIAL PROVENIENTE DE DEMOLICIÒN** | 1d | 2022-03-10 | 2022-03-10 |  | 44d |
| 98 |  | ELIMINACION DE DESMONTE PROVENIENTE DE DEMOLICIONES C/EQUIPO | 1d | 2022-03-10 | 2022-03-10 | 92 | 44d |
| 99 | 1.2.3.3.5 | **MOVIMIENTO DE TIERRAS** | 46d | 2022-03-09 | 2022-04-30 |  | 0d |
| 100 |  | EXCAVACIÓN MANUAL EN TERRENO SEMIRROCOSO PARA CANALES | 4d | 2022-03-09 | 2022-03-12 | 90 | 0d |
| 101 |  | EXCAVACIÓN MANUAL EN TERRENO SEMIRROCOSO PARA CAJAS DE INSPECCIÓN | 5d | 2022-03-14 | 2022-03-18 | 100 | 37d |
| 102 |  | EXCAVACION CON MAQUINARIA EN TERRENO NORMAL >4M | 3d | 2022-03-14 | 2022-03-16 | 100 | 39d |
| 103 |  | COMPACTADO DE SUBRASANTE DE CAJA Y CANALES | 3d | 2022-03-30 | 2022-04-01 | 106 | 0d |
| 104 |  | RELLENO Y COMPACTADO CON MATERIAL SELECCIONADO PARA INSTALACION DE RED COLECTORA | 5d | 2022-04-19 | 2022-04-23 | 135 | 0d |
| 105 |  | REFINE Y NIVELACION DE ZANJA EN TERRENO NORMAL PARA TUBERÍAS | 5d | 2022-03-14 | 2022-03-18 | 100 | 0d |
| 106 |  | REFINE Y NIVELACION DE ZANJA EN TERRENO NORMAL PARA CANALES | 12d | 2022-03-16 | 2022-03-29 | 105FS-3d | 0d |
| 107 |  | ACARREO MANUAL DE TUBERÍAS(D=60m) | 9d | 2022-04-02 | 2022-04-12 | 103 | 16d |
| 108 |  | ACARREO DE MEZCLA DE CONCRETO PARA CAJAS Y CANALES | 4d | 2022-04-02 | 2022-04-06 | 112SS | 21d |
| 109 |  | ACARREO MANUAL INTERNO DE MATERIAL EXCEDENTE PROVENIENTE DE EXCAVACIONES | 7d | 2022-04-22 | 2022-04-29 | 104FS-2d | 0d |
| 110 |  | ELIMINACIÓN DE MATERIAL EXCEDENTE | 1d | 2022-04-30 | 2022-04-30 | 109 | 0d |
| 111 | 1.2.3.3.6 | **CONCRETO SIMPLE** | 3d | 2022-04-02 | 2022-04-05 |  | 0d |
| 112 |  | SOLADO EN CANAL DE CONCRETO EN PISO f'c= 100 kg/cm2 E=10CM | 2d | 2022-04-02 | 2022-04-04 | 103 | 0d |
| 113 |  | SOLADO PARA CAJAS DE INSPECCIÒN f'c= 100 kg/cm2 E=10CM | 1d | 2022-04-05 | 2022-04-05 | 112 | 14d |
| 114 | 1.2.3.3.7 | **RED DE RECOLECCIÓN** | 18d | 2022-04-05 | 2022-04-25 |  | 0d |
| 115 |  | CANAL DE CONCRETO ARMADO EN PISO A=30 CM H=VARIABLE, E=15cm | 4d | 2022-04-05 | 2022-04-08 | 112 | 0d |
| 116 |  | CANAL DE CONCRETO ARMADO EN PISO A=34CM H=VARIABLE, E=15cm | 4d | 2022-04-09 | 2022-04-13 | 115 | 0d |
| 117 |  | REJILLA METALICA TPO IV A=50cm | 2d | 2022-04-14 | 2022-04-15 | 116 | 8d |
| 118 |  | TAPA DE CONCRETO 70x70x5cm f'c=175kg/cm2 | 1d | 2022-04-09 | 2022-04-09 | 130 | 17d |
| 119 |  | TAPA DE CONCRETO 100x50x5cm f'c=175kg/cm2 | 1d | 2022-04-11 | 2022-04-11 | 118 | 17d |
| 120 |  | TAPA DE REJILLA 30X30cm | 1d | 2022-04-16 | 2022-04-16 | 117 | 8d |
| 121 |  | TAPA DE REJILLA 70X50cm | 1d | 2022-04-18 | 2022-04-18 | 120 | 8d |
| 122 |  | TAPA DE REJILLA 70X70cm | 1d | 2022-04-19 | 2022-04-19 | 121 | 8d |
| 123 |  | TAPA DE REJILLA 70X110cm | 1d | 2022-04-20 | 2022-04-20 | 122 | 8d |
| 124 |  | TAPA DE REJILLA 140X570cm | 1d | 2022-04-21 | 2022-04-21 | 123 | 8d |
| 125 |  | TUBERÍA PVC SAP C-10 Ø DE 3" MONTANTE | 2d | 2022-04-09 | 2022-04-11 | 115 | 13d |
| 126 |  | RED COLECTORA TUBERÍA PVC UF Ø DE 4" | 1d | 2022-04-12 | 2022-04-12 | 125 | 13d |
| 127 |  | RED COLECTORA TUBERÍA PVC UF Ø DE 6" | 1d | 2022-04-13 | 2022-04-13 | 126 | 13d |
| 128 |  | RED COLECTORA TUBERÍA PVC UF Ø DE 16" | 2d | 2022-04-14 | 2022-04-15 | 127 | 13d |
| 129 |  | CAJAS DE INSPECCIÓN TIPO II A=0.20M L=0.20M | 1d | 2022-04-06 | 2022-04-06 | 113 | 14d |
| 130 |  | CAJAS DE INSPECCIÓN TIPO II A=0.60M L=0.40M H=VARIABLE | 2d | 2022-04-07 | 2022-04-08 | 129 | 14d |
| 131 |  | CAJAS DE INSPECCIÓN TIPO II A=0.60M L=0.60M H=VARIABLE | 2d | 2022-04-09 | 2022-04-11 | 130 | 14d |
| 132 |  | CAJAS DE INSPECCIÓN TIPO II A=0.60M L=0.90M H=VARIABLE | 1d | 2022-04-12 | 2022-04-12 | 131 | 14d |
| 133 |  | CAJAS DE INSPECCIÓN TIPO II A=0.60M L=1.20M H=VARIABLE | 1d | 2022-04-13 | 2022-04-13 | 132 | 14d |
| 134 |  | CAJAS DE INSPECCIÓN TIPO VIIA DESARENADOR A=1.30 L=5.50M H=VARIABLE | 1d | 2022-04-14 | 2022-04-14 | 133 | 14d |
| 135 |  | TARRAJEO EN SECCION DE CAJAS INCL. ARISTAS | 4d | 2022-04-14 | 2022-04-18 | 116 | 0d |
| 136 |  | TARRAJEO EN SECCION DE CANALES INCL. ARISTAS | 6d | 2022-04-19 | 2022-04-25 | 135 | 3d |
| 137 | 1.2.3.3.8 | **ACCESORIOS** | 2d | 2022-04-12 | 2022-04-13 | 125 | 15d |
| 138 |  | CODO PVC SAP C-10 Ø 3" x 45° | 2d | 2022-04-12 | 2022-04-13 |  | 15d |
| 139 |  | CODO PVC SAP C-10 Ø 4" x 45° | 1d | 2022-04-12 | 2022-04-12 |  | 16d |
| 140 |  | CODO PVC SAP C-10 Ø 3" x 90° | 1d | 2022-04-12 | 2022-04-12 |  | 16d |

| ID | WBS | Task | Duration | Start | Finish | Predecessors | Total float |
| --- | --- | --- | --- | --- | --- | --- | --- |
| 141 |  | CODO PVC UF S-25 Ø 4" x 45° | 1d | 2022-04-12 | 2022-04-12 |  | 16d |
| 142 |  | CODO PVC UF-S-25 Ø 6" x 45° | 1d | 2022-04-12 | 2022-04-12 |  | 16d |
| 143 |  | CODO PVC UF-S-25 Ø 8" x 45° | 1d | 2022-04-12 | 2022-04-12 |  | 16d |
| 144 |  | CODO PVC UF-S-25 Ø 10" x 45° | 1d | 2022-04-12 | 2022-04-12 |  | 16d |
| 145 |  | CODO DE PVC UF S-25 Ø 6" x 90° | 1d | 2022-04-12 | 2022-04-12 |  | 16d |
| 146 |  | CODO PVC UF-S-25 Ø 10" x 90° | 1d | 2022-04-12 | 2022-04-12 |  | 16d |
| 147 |  | YEE DE PVC SAP C-10 Ø 3" | 1d | 2022-04-12 | 2022-04-12 |  | 16d |
| 148 |  | YEE DE PVC UF S-25 Ø 4" | 1d | 2022-04-12 | 2022-04-12 |  | 16d |
| 149 |  | YEE DE PVC UF S-25Ø 6" | 1d | 2022-04-12 | 2022-04-12 |  | 16d |
| 150 |  | REDUCCION DE PVC UF S-25 Ø 4" A 3" | 1d | 2022-04-12 | 2022-04-12 |  | 16d |
| 151 |  | REDUCCION DE PVC UF S-25 Ø 6" A 3" | 1d | 2022-04-12 | 2022-04-12 |  | 16d |
| 152 |  | REDUCCION DE PVC UF S-25 Ø 6" A 4" | 1d | 2022-04-12 | 2022-04-12 |  | 16d |
| 153 | 1.2.3.3.9 | **POZO DE PERCOLACION** | 2d | 2022-04-26 | 2022-04-27 |  | 3d |
| 154 |  | POZO DE PERCOLACION | 2d | 2022-04-26 | 2022-04-27 | 136 | 3d |
| 155 | 1.2.3.4 | **SISTEMA DE DESAGUE Y VENTILACION** | 46d | 2022-03-08 | 2022-04-29 |  | 1d |
| 156 | 1.2.3.4.1 | **TRABAJOS PRELIMINARES** | 2d | 2022-03-08 | 2022-03-09 |  | 1d |
| 157 |  | LIMPIEZA DE TERRENO MANUAL | 1d | 2022-03-08 | 2022-03-08 | 89 | 1d |
| 158 |  | TRAZO Y REPLANTEO PRELIMINAR | 1d | 2022-03-09 | 2022-03-09 | 157 | 1d |
| 159 | 1.2.3.4.2 | **MOVIMIENTO DE TIERRAS** | 45d | 2022-03-09 | 2022-04-29 |  | 1d |
| 160 |  | EXCAVACIÓN MANUAL EN TERRENO NORMAL PARA TUBERIA H<1m | 10d | 2022-03-10 | 2022-03-21 | 158 | 1d |
| 161 |  | EXCAVACIÓN MANUAL EN TERRENO NORMAL PARA TUBERIA H>1m | 16d | 2022-03-16 | 2022-04-02 | 160FS-5d | 1d |
| 162 |  | REFINE, NIVELACION Y CONFORMACION DE FONDOS DE ZANJA | 11d | 2022-03-26 | 2022-04-07 | 161FS-7d | 1d |
| 163 |  | CAMA DE APOYO CON MATERIAL PROPIO ZARANDEADO PARA TUBERIA | 10d | 2022-04-02 | 2022-04-13 | 162FS-5d | 1d |
| 164 |  | ACARREO DE TUBERIA PVC UF DE 4" - 6" | 4d | 2022-04-14 | 2022-04-18 | 163 | 11d |
| 165 |  | TUBERIA PVC UF S-25 DE Ø 4" | 1d | 2022-04-14 | 2022-04-14 | 163 | 1d |
| 166 |  | CODO PVC UF-S-25 Ø 6" x 45° | 1d | 2022-04-14 | 2022-04-14 | 165SS | 14d |
| 167 |  | CODO PVC UF-S-25 Ø 6" x 90° | 1d | 2022-04-14 | 2022-04-14 | 165SS | 14d |
| 168 |  | RELLENO Y COMPACTADO CON MATERIAL PROPIO SELECCIONADO | 7d | 2022-04-15 | 2022-04-22 | 165 | 1d |
| 169 |  | RELLENO Y COMPACTADO CON MATERIAL PROPIO SIN TRATAR | 7d | 2022-04-21 | 2022-04-28 | 168FS-2d | 1d |
| 170 |  | DEMOLICION DE VEREDA DE CONCRETO | 2d | 2022-03-09 | 2022-03-10 | 157 | 40d |
| 171 |  | ELIMINACIÓN DE MATERIAL EXCEDENTE | 1d | 2022-04-29 | 2022-04-29 | 169 | 1d |
| 172 |  | ELIMINACION DE MATERIAL PROVENIENTE DE DEMOLICION DE VEREDA | 4d | 2022-03-11 | 2022-03-15 | 170 | 40d |
| 173 | 1.2.3.4.3 | **CAMARAS DE INSPECCIÓN** | 11d | 2022-03-10 | 2022-03-22 |  | 34d |
| 174 |  | SOLADO f´c=100 Kg/cm2 E=10 CM | 1d | 2022-03-12 | 2022-03-12 | 175 | 34d |
| 175 |  | ACARREO DE MEZCLA DE CONCRETO | 2d | 2022-03-10 | 2022-03-11 | 158 | 34d |
| 176 |  | ENCOFRADO Y DESENCOFRADO EN CAJAS DE REGISTRO | 5d | 2022-03-14 | 2022-03-18 | 174 | 34d |
| 177 |  | ACABADO PULIDO | 3d | 2022-03-19 | 2022-03-22 | 176 | 34d |
| 178 | 1.2.3.4.4 | **ESTRUCTURAS** | 6d | 2022-03-14 | 2022-03-19 |  | 36d |
| 179 |  | COLUMNETAS DE CONCRETO f'c=175 Kg/cm2 PARA MONTANTES.. | 6d | 2022-03-14 | 2022-03-19 | 174 | 36d |
| 180 | 1.2.4 | **INSTALACIONES ELECTRICAS** | 58d | 2022-02-19 | 2022-04-27 | 16SS | 3d |
| 181 | 1.2.4.1 | **ALIMENTADORES** | 18d | 2022-02-19 | 2022-03-11 |  | 3d |
| 182 | 1.2.4.1.1 | **INTERRUPTORES TERMOMAGNETICOS** | 1d | 2022-02-19 | 2022-02-19 |  | 3d |
| 183 |  | INTERRUPTOR TERMOMAGNETICO DE 2x25 A, 220V | 1d | 2022-02-19 | 2022-02-19 |  | 3d |
| 184 | 1.2.4.1.2 | **DUCTOS Y TUBERIAS** | 10d | 2022-02-21 | 2022-03-03 |  | 39d |
| 185 |  | TENDIDO DE TUBERIA PVC SAP 1 1/2" | 5d | 2022-02-21 | 2022-02-25 | 183 | 39d |
| 186 |  | CURVA PVC SAP 1 1/2" | 3d | 2022-02-26 | 2022-03-01 | 185 | 41d |
| 187 |  | CONECTOR PVC SAP 1 1/2" | 2d | 2022-02-26 | 2022-02-28 | 185 | 42d |
| 188 |  | TENDIDO DE TUBERIA PVC SAP 2" | 3d | 2022-02-26 | 2022-03-01 | 185 | 39d |
| 189 |  | CURVA PVC SAP 2" | 1d | 2022-03-02 | 2022-03-02 | 188 | 40d |
| 190 |  | CONECTOR PVC SAP 2" | 2d | 2022-03-02 | 2022-03-03 | 188 | 39d |
| 191 | 1.2.4.1.3 | **CONDUCTORES Y CABLES** | 7d | 2022-03-04 | 2022-03-11 |  | 39d |
| 192 |  | TENDIDO DE CABLE N2XOH DE 3X10mm2 | 3d | 2022-03-04 | 2022-03-07 | 184 | 39d |
| 193 |  | TENDIDO DE CABLE N2XOH DE 3x16mm² | 2d | 2022-03-04 | 2022-03-05 | 192SS | 39d |
| 194 |  | TENDIDO DE CABLE N2XOH DE 3X25mm2 | 1d | 2022-03-07 | 2022-03-07 | 193 | 39d |
| 195 |  | TENDIDO DE CABLE N2XOH DE 3X35mm2 | 3d | 2022-03-07 | 2022-03-09 | 194SS | 39d |
| 196 |  | TENDIDO DE CABLE N2XOH DE 3X70mm2 | 1d | 2022-03-10 | 2022-03-10 | 195 | 39d |
| 197 |  | TENDIDO DE CABLE N2XOH DE 3X95mm2 | 1d | 2022-03-10 | 2022-03-10 | 196SS | 39d |
| 198 |  | CABLE DE COBRE DESNUDO DE 50MM2 | 1d | 2022-03-11 | 2022-03-11 | 197 | 39d |
| 199 | 1.2.4.2 | **ALUMBRADO** | 57d | 2022-02-21 | 2022-04-27 |  | 3d |
| 200 | 1.2.4.2.1 | **DUCTOS Y TUBERIAS** | 6d | 2022-02-21 | 2022-02-26 |  | 3d |
| 201 |  | CURVA METALICO EMT 19mm | 1d | 2022-02-26 | 2022-02-26 | 202 | 54d |
| 202 |  | CONECTOR RECTO METALICO EMT 19 mm | 5d | 2022-02-21 | 2022-02-25 | 183 | 3d |
| 203 |  | COPLE METALICO EMT 19 mm | 1d | 2022-02-26 | 2022-02-26 | 202 | 54d |
| 204 |  | TENDIDO DE TUBERIA EMT 1 1/2" | 1d | 2022-02-26 | 2022-02-26 | 202 | 3d |
| 205 | 1.2.4.2.2 | **ARTEFACTOS DE ILUMINACION** | 51d | 2022-02-28 | 2022-04-27 |  | 3d |
| 206 | 1.2.4.2.2.1 | **PARA TECHO** | 41d | 2022-02-28 | 2022-04-15 |  | 3d |
| 207 |  | LUMINARIA PANEL LED RECTANGULAR 1200X300mm | 7d | 2022-02-28 | 2022-03-07 | 204 | 3d |
| 208 |  | TUBO LED T5/T8 10W CON CARCASA, ACCESORIOS DE CONEXIÓN Y FIJACION | 3d | 2022-02-28 | 2022-03-02 | 207SS | 3d |
| 209 |  | TUBO LED T5/T8 18W CON CARCASA, ACCESORIOS DE CONEXIÓN Y FIJACION | 5d | 2022-03-03 | 2022-03-08 | 208 | 3d |
| 210 |  | LUMINARIA PANEL LED PARA ADOSAR CIRCULAR DE 40 W | 3d | 2022-03-03 | 2022-03-05 | 209SS | 3d |

| ID | WBS | Task | Duration | Start | Finish | Predecessors | Total float |
| --- | --- | --- | --- | --- | --- | --- | --- |
| 211 |  | LUMINARIA PANEL LED PARA ADOSAR CIRCULAR DE 24 W | 4d | 2022-03-07 | 2022-03-10 | 210 | 3d |
| 212 |  | LUMINARIA PANEL LED PARA ADOSAR CIRCULAR DE 18 W | 8d | 2022-03-07 | 2022-03-15 | 211SS | 3d |
| 213 |  | LUMINARIA PANEL LED PARA ADOSAR CIRCULAR DE 12 W | 2d | 2022-03-16 | 2022-03-17 | 212 | 3d |
| 214 |  | LUMINARIA TIPO DICROICO DE 10W | 5d | 2022-03-16 | 2022-03-21 | 213SS | 3d |
| 215 |  | FAROLA LED ORNAMENTAL 60W 6500K,IP65 | 4d | 2022-03-22 | 2022-03-25 | 214 | 3d |
| 216 |  | DOWNLUGTH LED PARA ADOSAR Y/O EMPOTRAR 20W | 2d | 2022-03-22 | 2022-03-23 | 215SS | 3d |
| 217 |  | REFLECTOR LED 50W | 3d | 2022-03-24 | 2022-03-26 | 216 | 3d |
| 218 |  | MARCO PARA PANEL LED DE 30X120CM | 7d | 2022-03-24 | 2022-03-31 | 217SS | 3d |
| 219 |  | APLIQUE LED 20W IP 65 | 1d | 2022-04-01 | 2022-04-01 | 218 | 3d |
| 220 |  | LUZ DE EMERGENCIA TIPO LED | 4d | 2022-04-02 | 2022-04-06 | 219 | 3d |
| 221 |  | LUMINARIA REFLECTOR LED DE 200W | 3d | 2022-04-07 | 2022-04-09 | 220 | 3d |
| 222 |  | REFLECTOR LED DE 10W INTERPERIE | 1d | 2022-04-11 | 2022-04-11 | 221 | 3d |
| 223 |  | APLIQUE DUAL DE MURO DUAL LED 2X11 W | 2d | 2022-04-12 | 2022-04-13 | 222 | 3d |
| 224 |  | LUZ GUIA LED 2W PARA EMPOTRAR | 2d | 2022-04-14 | 2022-04-15 | 223 | 3d |
| 225 | 1.2.4.2.2.2 | **INTERRUPTORES** | 4d | 2022-03-12 | 2022-03-16 | 181 | 39d |
| 226 |  | SALIDA PARA INTERRUPTOR CONMUTADO SIMPLE, INCLUYE INSTALACION | 2d | 2022-03-12 | 2022-03-14 |  | 39d |
| 227 |  | SALIDA PARA INTERRUPTOR CONMUTADO DOBLE, INCLUYE INSTALACION | 2d | 2022-03-15 | 2022-03-16 | 226 | 39d |
| 228 | 1.2.4.2.2.3 | **PRUEBAS ELECTRICAS** | 10d | 2022-04-16 | 2022-04-27 |  | 3d |
| 229 |  | MEDICION DE LUMINOCIDAD | 2d | 2022-04-16 | 2022-04-18 | 224 | 3d |
| 230 |  | MEDICION DE CONTINUIDAD | 3d | 2022-04-19 | 2022-04-21 | 229 | 3d |
| 231 |  | MEDION DE RESISTENCIA DE PUESTA A TIERRA | 2d | 2022-04-22 | 2022-04-23 | 230 | 3d |
| 232 |  | MEDICION DE AISLAMIENTO | 3d | 2022-04-25 | 2022-04-27 | 231 | 3d |
| 233 | 1.2.5 | **INSTALACIONES ESPECIALES** | 50d | 2022-02-19 | 2022-04-18 | 16SS | 11d |
| 234 | 1.2.5.1 | **ACOMETIDAS Y BACKBONES** | 12d | 2022-02-19 | 2022-03-04 |  | 11d |
| 235 | 1.2.5.1.1 | **RACK DE COMUNICACIONES** | 12d | 2022-02-19 | 2022-03-04 |  | 11d |
| 236 |  | GABINETE DE PISO PARA COMUNICACIONES 42UR | 4d | 2022-02-19 | 2022-02-23 |  | 11d |
| 237 |  | GABINETE DE PISO PARA COMUNICACIONES 12UR | 5d | 2022-02-24 | 2022-03-01 | 236 | 35d |
| 238 |  | GABINETE DE PARED PARA COMUNICACIONES 12UR | 3d | 2022-03-02 | 2022-03-04 | 237 | 35d |
| 239 | 1.2.5.2 | **EQUIPOS Y ACCESORIOS** | 22d | 2022-02-24 | 2022-03-21 |  | 11d |
| 240 |  | SWITCH CORE DE 24 PUERTOS RJ45 10/100/1000Mbps | 1d | 2022-03-05 | 2022-03-05 | 238 | 35d |
| 241 |  | SWITCH POE DE 24 PUERTOS RJ45 10/100/1000Mbps | 2d | 2022-03-07 | 2022-03-08 | 240 | 35d |
| 242 |  | CENTRAL TELEFÓNICA IP HÍBRIDA | 1d | 2022-03-09 | 2022-03-09 | 241 | 35d |
| 243 |  | CENTRAL DE DETECCIÓN Y ALARMA CONTRAINCENDIO | 1d | 2022-03-10 | 2022-03-10 | 242 | 35d |
| 244 |  | ROUTER CLOUD CORE | 1d | 2022-03-11 | 2022-03-11 | 243 | 35d |
| 245 | 1.2.5.2.6 | **CONFIGURACION DE EQUIPOS** | 22d | 2022-02-24 | 2022-03-21 |  | 11d |
| 246 |  | CONFIGURACION DE SISTEMA DE DETECCION DE HUMO | 5d | 2022-03-12 | 2022-03-17 | 244 | 35d |
| 247 |  | CONFIGURACION DE TELEFONO IP | 2d | 2022-03-18 | 2022-03-19 | 246 | 35d |
| 248 |  | CONFIGURACION DE SISTEMA DE CENTRAL TELEFONICA | 1d | 2022-03-21 | 2022-03-21 | 247 | 35d |
| 249 | 1.2.5.2.6.4 | **CONDUCTORES DE COMUNICACIONES** | 22d | 2022-02-24 | 2022-03-21 |  | 11d |
| 250 |  | TENDIDO DE CABLE FPL ANTIFLAMA 2X16AWG LSZH | 11d | 2022-02-24 | 2022-03-08 | 236 | 11d |
| 251 |  | TENDIDO DE CABLE FTP CAT 6A | 11d | 2022-03-09 | 2022-03-21 | 250 | 11d |
| 252 | 1.2.5.3 | **RED DE VOZ, VIDEO Y DATOS** | 50d | 2022-02-19 | 2022-04-18 |  | 11d |
| 253 | 1.2.5.3.1 | **PATCH PANEL** | 3d | 2022-03-22 | 2022-03-24 |  | 11d |
| 254 |  | PATCH PANEL 24 PUERTOS CAT6 | 3d | 2022-03-22 | 2022-03-24 | 251 | 11d |
| 255 | 1.2.5.3.2 | **EQUIPOS Y ACCESORIOS** | 21d | 2022-03-25 | 2022-04-18 |  | 11d |
| 256 |  | ACCESS POINT WI-FI 4 POE OMNIDIRECCIONALES | 5d | 2022-03-25 | 2022-03-30 | 254 | 11d |
| 257 |  | CÁMARAS IP DOMO PoE IP67 IK10 | 5d | 2022-03-31 | 2022-04-05 | 256 | 11d |
| 258 |  | CÁMARAS IP PTZ DOMO PoE IP67 IK10 | 5d | 2022-03-31 | 2022-04-05 | 257SS | 11d |
| 259 |  | CÁMARAS IP WIFI IP67 IK10 | 1d | 2022-04-06 | 2022-04-06 | 258 | 11d |
| 260 |  | CÁMARAS INTERIOR IP WIFI IP67 IK10 | 4d | 2022-04-06 | 2022-04-09 | 259SS | 11d |
| 261 |  | GRABADOR NVR POE | 1d | 2022-04-11 | 2022-04-11 | 260 | 11d |
| 262 |  | TELÉFONO IP POE DE ESCRITORIO | 6d | 2022-04-12 | 2022-04-18 | 261 | 11d |
| 263 |  | TELÉFONO IP POE DE SMART | 2d | 2022-04-12 | 2022-04-13 | 262SS | 15d |
| 264 | 1.2.5.3.3 | **OBRAS PROVICIONALES** | 5d | 2022-02-19 | 2022-02-24 |  | 56d |
| 265 |  | ARMADO DE ANDAMIO PARA INSTALACIONES | 5d | 2022-02-19 | 2022-02-24 | 236SS | 56d |
| 266 | 1.2.5.4 | **SISTEMA DE EXTRACION DE AIRE** | 3d | 2022-03-22 | 2022-03-24 |  | 32d |
| 267 | 1.2.5.4.1 | **CONDUCTORES Y CABLES** | 3d | 2022-03-22 | 2022-03-24 | 249 | 32d |
| 268 |  | CABLE LSZH UNIPOLAR 4mm2 | 3d | 2022-03-22 | 2022-03-24 |  | 32d |
| 269 |  | Termino de Obra | 0d | 2022-02-19 | 2022-02-19 |  | 61d |

## Version 2 (saved 2022-06-10)

Note of the change: Merge branch 'main' of https://github.com/mrlivano/AMPLIACION-07-SR

Last finish 2022-04-30 → 2019-03-10 (-1147d).

Added:

| ID | Task | Duration | Start | Finish |
| --- | --- | --- | --- | --- |
| 270 | OBRAS PROVISIONALES, TRABAJOS PRELIMINARES, SEGURIDAD Y SALUD | 1d? | 2018-12-03 | 2018-12-04 |

Changed:

| ID | Task | Start | Finish | Duration |
| --- | --- | --- | --- | --- |
| 1 | **"MEJORAMIENTO DEL SERVICIO EDUCATIVO EN LA IEP N 54002 SANTA ROSA E IES SANTA ROSA DEL DISTRITO DE ABANCAY, PROVINCIA DE ABANCAY -** | 2022-02-19 → 2018-12-03 (-1174d) | 2022-04-30 → 2019-03-10 (-1147d) | 61d → 61d? |
| 2 | Inicio de Obra | 2022-02-19 → 2018-12-03 (-1174d) | 2022-02-19 → 2018-12-03 (-1174d) |  |
| 3 | **ADICIONAL PARTIDAS NUEVAS** | 2022-02-19 → 2018-12-03 (-1174d) | 2022-04-30 → 2019-03-10 (-1147d) |  |
| 4 | **OBRAS PROVISIONALES, TRABAJOS PRELIMINARES, SEGURIDAD Y SALUD** | 2022-02-19 → 2018-12-03 (-1174d) | 2022-04-30 → 2019-03-10 (-1147d) |  |
| 5 | **SEGURIDAD Y SALUD** | 2022-02-19 → 2018-12-03 (-1174d) | 2022-03-24 → 2019-01-18 (-1161d) |  |
| 6 | EQUIPOS DE PROTECCIÓN INDIVIDUAL COMPLEMENTARIOS | 2022-02-19 → 2018-12-03 (-1174d) | 2022-03-24 → 2019-01-18 (-1161d) |  |
| 7 | **OBRAS DE TRABAJOS PRELIMINARES** | 2022-02-19 → 2018-12-03 (-1174d) | 2022-04-30 → 2019-03-10 (-1147d) |  |
| 8 | LIMPIEZA DE JUNTAS DE PORCELANATO PARA FRAGUA | 2022-03-14 → 2019-01-02 (-1167d) | 2022-03-22 → 2019-01-15 (-1162d) |  |
| 9 | DESCASCARAMIENTO DE TARRAJEO EXISTENTE | 2022-02-19 → 2018-12-03 (-1174d) | 2022-02-25 → 2018-12-12 (-1171d) |  |
| 10 | DEMOLICION DE CONTRAPISO EXISTENTE E=5 cm | 2022-02-26 → 2018-12-13 (-1171d) | 2022-03-03 → 2018-12-20 (-1169d) |  |
| 11 | ELIMINACION DE DESMONTE PROVENIENTE DE DEMOLICION | 2022-03-04 → 2018-12-21 (-1169d) | 2022-03-12 → 2019-01-02 (-1165d) |  |
| 12 | LIJADO DE MURO EN PINTURA EXISTENTE | 2022-02-19 → 2018-12-03 (-1174d) | 2022-03-14 → 2019-01-04 (-1165d) |  |
| 13 | MONTANJE Y DESMONTAJE DE ANDAMIO PARA PINTURA EN EXTERIOR | 2022-02-19 → 2018-12-03 (-1174d) | 2022-04-30 → 2019-03-10 (-1147d) |  |
| 14 | **TRASLADO INTERNO EN OBRA** | 2022-03-01 → 2018-12-16 (-1171d) | 2022-03-08 → 2018-12-27 (-1167d) |  |
| 15 | ACARREO DE MEZCLA DE CONCRETO | 2022-03-01 → 2018-12-16 (-1171d) | 2022-03-08 → 2018-12-27 (-1167d) |  |
| 16 | **ARQUITECTURA** | 2022-02-19 → 2018-12-03 (-1174d) | 2022-04-08 → 2019-02-08 (-1155d) |  |
| 17 | **MUROS Y TABIQUES** | 2022-02-19 → 2018-12-03 (-1174d) | 2022-02-25 → 2018-12-12 (-1171d) |  |
| 18 | MURO DE ALUMINIO COMPUESTO E=15cm | 2022-02-19 → 2018-12-03 (-1174d) | 2022-02-25 → 2018-12-12 (-1171d) |  |
| 19 | **REVOQUES ENLUCIDOS Y MOLDURAS** | 2022-02-19 → 2018-12-03 (-1174d) | 2022-02-26 → 2018-12-14 (-1170d) |  |
| 20 | TARRAJEO EN COLUMNAS CIRCULARES | 2022-02-19 → 2018-12-03 (-1174d) | 2022-02-25 → 2018-12-12 (-1171d) |  |
| 21 | SOLAQUEO EN VIGAS DE LOSA NERVADA | 2022-02-19 → 2018-12-03 (-1174d) | 2022-02-26 → 2018-12-14 (-1170d) |  |
| 22 | **PISOS Y PAVIMENTOS** | 2022-02-26 → 2018-12-13 (-1171d) | 2022-03-04 → 2018-12-22 (-1168d) |  |
| 23 | **PISOS** | 2022-03-01 → 2018-12-16 (-1171d) | 2022-03-04 → 2018-12-22 (-1168d) |  |
| 24 | PISO DE CEMENTO PULIDO COLOREADO | 2022-03-01 → 2018-12-16 (-1171d) | 2022-03-02 → 2018-12-19 (-1169d) |  |
| 25 | REVESTIMIENTO DE PEDELTAL CON TERRAZO PULIDO | 2022-03-03 → 2018-12-19 (-1170d) | 2022-03-04 → 2018-12-22 (-1168d) |  |
| 26 | **SARDINELES** | 2022-02-26 → 2018-12-13 (-1171d) | 2022-03-03 → 2018-12-20 (-1169d) |  |
| 27 | SARDINEL DE CONCRETO CON ACABADO FROTACHADO Y PINTADO DE 0.10X1.00M | 2022-02-26 → 2018-12-13 (-1171d) | 2022-02-28 → 2018-12-16 (-1170d) |  |
| 28 | SARDINEL DE CONCRETO CON ACABADO FROTACHADO DE 0.10X0.60M | 2022-03-01 → 2018-12-16 (-1171d) | 2022-03-02 → 2018-12-19 (-1169d) |  |
| 29 | SARDINEL DE CONCRETO CON ACABADO FROTACHADO DE 0.10X0.80M | 2022-03-03 → 2018-12-19 (-1170d) | 2022-03-03 → 2018-12-20 (-1169d) |  |
| 30 | **ZOCALOS Y CONTRAZOCALOS** | 2022-02-26 → 2018-12-13 (-1171d) | 2022-03-05 → 2018-12-24 (-1167d) |  |
| 31 | **CONTRAZOCALOS** | 2022-02-26 → 2018-12-13 (-1171d) | 2022-03-05 → 2018-12-24 (-1167d) |  |
| 32 | CONTRAZOCALO VINILICO SPC DE 8cm | 2022-02-26 → 2018-12-13 (-1171d) | 2022-02-28 → 2018-12-16 (-1170d) |  |
| 33 | CONTRAZOCALO SANITARIO DE CEMENTO PULIDO C/MORTERO 1:5 DE 2CM, H=10CM | 2022-03-01 → 2018-12-16 (-1171d) | 2022-03-05 → 2018-12-24 (-1167d) |  |
| 34 | **COBERTURA** | 2022-03-07 → 2018-12-24 (-1169d) | 2022-03-09 → 2018-12-28 (-1167d) |  |
| 35 | COBERTURA C/LADRILLO PASTELERO | 2022-03-07 → 2018-12-24 (-1169d) | 2022-03-08 → 2018-12-27 (-1167d) |  |
| 36 | COBERTURA DE POLICARBONATO SOLIDO Y TUBO DE ACERO LAC | 2022-03-09 → 2018-12-27 (-1168d) | 2022-03-09 → 2018-12-28 (-1167d) |  |
| 37 | **CARPINTERIA METALICA Y HERRERIA** | 2022-03-10 → 2018-12-29 (-1167d) | 2022-03-22 → 2019-01-15 (-1162d) |  |
| 38 | **CARPINTERIA DE FIERRO** | 2022-03-10 → 2018-12-29 (-1167d) | 2022-03-22 → 2019-01-15 (-1162d) |  |
| 39 | SUMINISTRO E INSTALACION DE REJA DE ACERO GALVANIZADO DE 3" | 2022-03-10 → 2018-12-29 (-1167d) | 2022-03-14 → 2019-01-04 (-1165d) |  |
| 40 | PUERTA METALICA | 2022-03-15 → 2019-01-04 (-1166d) | 2022-03-18 → 2019-01-10 (-1163d) |  |
| 41 | PUERTA CORTAFUEGO (INCL. INSTALACION Y ACCESORIOS) | 2022-03-19 → 2019-01-10 (-1164d) | 2022-03-19 → 2019-01-12 (-1162d) |  |
| 42 | VENTANA DE REJA METALICA | 2022-03-21 → 2019-01-12 (-1164d) | 2022-03-22 → 2019-01-15 (-1162d) |  |
| 43 | **CERRAJERIA** | 2022-03-09 → 2018-12-27 (-1168d) | 2022-03-12 → 2019-01-02 (-1165d) |  |
| 44 | FRENO HIDRAULICO DE PISO PARA MAMPARAS | 2022-03-09 → 2018-12-27 (-1168d) | 2022-03-09 → 2018-12-28 (-1167d) |  |
| 45 | FRENO HIDRAULICO AEREO PARA PUERTAS DE MADERA | 2022-03-10 → 2018-12-29 (-1167d) | 2022-03-12 → 2019-01-02 (-1165d) |  |
| 46 | **JUNTAS** | 2022-03-23 → 2019-01-15 (-1163d) | 2022-03-30 → 2019-01-26 (-1159d) |  |
| 47 | SELLADO DE JUNTAS CON POLIURETANO | 2022-03-23 → 2019-01-15 (-1163d) | 2022-03-30 → 2019-01-26 (-1159d) |  |
| 48 | **PINTURAS** | 2022-03-05 → 2018-12-22 (-1169d) | 2022-04-08 → 2019-02-08 (-1155d) |  |
| 49 | EMPASTADO EN MUROS INTERIORES | 2022-03-05 → 2018-12-22 (-1169d) | 2022-03-22 → 2019-01-15 (-1162d) |  |
| 50 | EMPASTADO EN MUROS EXTERIORES | 2022-03-09 → 2018-12-27 (-1168d) | 2022-03-18 → 2019-01-10 (-1163d) |  |
| 51 | EMPASTADO DE SUPERF. COLUMNAS INCL. ARISTAS | 2022-03-14 → 2019-01-02 (-1167d) | 2022-03-30 → 2019-01-26 (-1159d) |  |
| 52 | EMPASTADO DE SUPERF. VIGAS INCL. ARISTAS | 2022-03-17 → 2019-01-07 (-1165d) | 2022-03-25 → 2019-01-20 (-1160d) |  |
| 53 | EMPASTADO EN VESTIDURA DE DERRAMES | 2022-03-22 → 2019-01-14 (-1163d) | 2022-03-26 → 2019-01-21 (-1160d) |  |
| 54 | EMPASTADO EN CIELORRASOS | 2022-03-22 → 2019-01-14 (-1163d) | 2022-04-08 → 2019-02-08 (-1155d) |  |
| 55 | **OTROS** | 2022-03-01 → 2018-12-16 (-1171d) | 2022-03-29 → 2019-01-25 (-1159d) |  |
| 56 | PERFIL DE ALUMINIO CURVO EN ZOCALOS CONTRAZOCALOS Y MESAS | 2022-03-01 → 2018-12-16 (-1171d) | 2022-03-12 → 2019-01-02 (-1165d) |  |
| 57 | CANTONERA DE ALUMINIO PARA GRADAS | 2022-03-14 → 2019-01-02 (-1167d) | 2022-03-16 → 2019-01-07 (-1164d) |  |
| 58 | ESCUDO INSTITUCIONAL DE ALUMINIO. | 2022-03-17 → 2019-01-07 (-1165d) | 2022-03-17 → 2019-01-09 (-1163d) |  |
| 59 | PINTURA SATINADA PARA MURAL | 2022-03-18 → 2019-01-09 (-1164d) | 2022-03-24 → 2019-01-18 (-1161d) |  |
| 60 | CAMPANA H=0.60M | 2022-03-25 → 2019-01-18 (-1162d) | 2022-03-25 → 2019-01-20 (-1160d) |  |
| 61 | CRUZ DE ALUMINIO TEXTURIZADO EN INTERIOR Y EXTERIOR 1.80X3.00M | 2022-03-26 → 2019-01-20 (-1161d) | 2022-03-28 → 2019-01-23 (-1160d) |  |
| 62 | ESTATUA DE SANTA ROSA H=2.20 | 2022-03-29 → 2019-01-23 (-1161d) | 2022-03-29 → 2019-01-25 (-1159d) |  |
| 63 | **INSTALACIONES SANITARIAS** | 2022-03-05 → 2018-12-22 (-1169d) | 2022-04-30 → 2019-03-10 (-1147d) |  |
| 64 | **APARATOS SANITARIOS Y ACCESORIOS** | 2022-03-07 → 2018-12-24 (-1169d) | 2022-03-08 → 2018-12-27 (-1167d) |  |
| 65 | **SUMINISTRO DE ACCESORIOS SANITARIOS** | 2022-03-07 → 2018-12-24 (-1169d) | 2022-03-08 → 2018-12-27 (-1167d) |  |
| 66 | MODULO DE BEBEDERO DE AGUA | 2022-03-07 → 2018-12-24 (-1169d) | 2022-03-08 → 2018-12-27 (-1167d) |  |
| 67 | **SISTEMA DE AGUA FRIA REPOSICION** | 2022-03-05 → 2018-12-22 (-1169d) | 2022-03-23 → 2019-01-17 (-1161d) |  |
| 68 | **TRABAJOS PRELIMINARES** | 2022-03-05 → 2018-12-22 (-1169d) | 2022-03-07 → 2018-12-25 (-1168d) |  |
| 69 | LIMPIEZA DE TERRENO MANUAL | 2022-03-05 → 2018-12-22 (-1169d) | 2022-03-05 → 2018-12-24 (-1167d) |  |
| 70 | TRAZO Y REPLANTEO PRELIMINAR.. | 2022-03-07 → 2018-12-24 (-1169d) | 2022-03-07 → 2018-12-25 (-1168d) |  |

| ID | Task | Start | Finish |
| --- | --- | --- | --- |
| 71 | **REMOCIONES** | 2022-03-07 → 2018-12-24 (-1169d) | 2022-03-07 → 2018-12-25 (-1168d) |
| 72 | DEMOLICIÓN DE PISO DE CONCRETO | 2022-03-07 → 2018-12-24 (-1169d) | 2022-03-07 → 2018-12-25 (-1168d) |
| 73 | **ELIMINACION DE MATERIAL PROVENIENTE DE DEMOLICION** | 2022-03-08 → 2018-12-25 (-1169d) | 2022-03-08 → 2018-12-27 (-1167d) |
| 74 | ELIMINACION DE DESMONTE PROVENIENTE DE DEMOLICIONES C/EQUIPO | 2022-03-08 → 2018-12-25 (-1169d) | 2022-03-08 → 2018-12-27 (-1167d) |
| 75 | **MOVIMIENTO DE TIERRAS** | 2022-03-08 → 2018-12-25 (-1169d) | 2022-03-23 → 2019-01-17 (-1161d) |
| 76 | EXCAVACIÓN MANUAL EN TERRENO NORMAL PARA TUBERIAS | 2022-03-08 → 2018-12-25 (-1169d) | 2022-03-10 → 2018-12-30 (-1166d) |
| 77 | RELLENO Y COMPACTADO CON MATERIAL SELECCIONADO PARA INSTALACION DE TUBERIA | 2022-03-16 → 2019-01-06 (-1165d) | 2022-03-18 → 2019-01-10 (-1163d) |
| 78 | REFINE Y NIVELACION DE ZANJA EN TERRENO NORMAL PARA TUBERIAS | 2022-03-11 → 2018-12-30 (-1167d) | 2022-03-12 → 2019-01-02 (-1165d) |
| 79 | ACARREO MANUAL DE TUBERÍAS(D=60m) | 2022-03-14 → 2019-01-02 (-1167d) | 2022-03-14 → 2019-01-04 (-1165d) |
| 80 | ACARREO MANUAL INTERNO DE MATERIAL EXCEDENTE PROVENIENTE DE EXCAVACIONES | 2022-03-19 → 2019-01-10 (-1164d) | 2022-03-22 → 2019-01-15 (-1162d) |
| 81 | ELIMINACIÓN DE MATERIAL EXCEDENTE | 2022-03-23 → 2019-01-15 (-1163d) | 2022-03-23 → 2019-01-17 (-1161d) |
| 82 | **RED DE DISTRIBUCION** | 2022-03-15 → 2019-01-04 (-1166d) | 2022-03-15 → 2019-01-05 (-1165d) |
| 83 | SUMINISTRO E INSTALACION DE TUBERIA PVC SAP C-10 Ø 1" | 2022-03-15 → 2019-01-04 (-1166d) | 2022-03-15 → 2019-01-05 (-1165d) |
| 84 | **ACCESORIOS DE REDES DE AGUA** | 2022-03-16 → 2019-01-06 (-1165d) | 2022-03-16 → 2019-01-07 (-1164d) |
| 85 | CODO DE PVC Ø 1" x 90° SP | 2022-03-16 → 2019-01-06 (-1165d) | 2022-03-16 → 2019-01-07 (-1164d) |
| 86 | UNIÓN PVC SAP Ø 1" | 2022-03-16 → 2019-01-06 (-1165d) | 2022-03-16 → 2019-01-07 (-1164d) |
| 87 | **SISTEMA DE DRENAJE PLUVIAL** | 2022-03-07 → 2018-12-24 (-1169d) | 2022-04-30 → 2019-03-10 (-1147d) |
| 88 | **TRABAJOS PRELIMINARES** | 2022-03-07 → 2018-12-24 (-1169d) | 2022-03-08 → 2018-12-27 (-1167d) |
| 89 | LIMPIEZA DE TERRENO MANUAL | 2022-03-07 → 2018-12-24 (-1169d) | 2022-03-07 → 2018-12-25 (-1168d) |
| 90 | TRAZO Y REPLANTEO PRELIMINAR.. | 2022-03-08 → 2018-12-25 (-1169d) | 2022-03-08 → 2018-12-27 (-1167d) |
| 91 | **REMOCIONES** | 2022-03-08 → 2018-12-25 (-1169d) | 2022-03-11 → 2019-01-01 (-1165d) |
| 92 | DEMOLICIÒN DE CANAL EXISTENTE | 2022-03-08 → 2018-12-25 (-1169d) | 2022-03-09 → 2018-12-28 (-1167d) |
| 93 | DEMOLICIÓN DE PISO DE CONCRETO | 2022-03-10 → 2018-12-29 (-1167d) | 2022-03-11 → 2019-01-01 (-1165d) |
| 94 | **REPOSICIONES** | 2022-04-26 → 2019-03-03 (-1150d) | 2022-04-27 → 2019-03-06 (-1148d) |
| 95 | REPOSICIÓN DE PISO DE CONCRETO ACABADO FROTACHADO | 2022-04-26 → 2019-03-03 (-1150d) | 2022-04-26 → 2019-03-04 (-1149d) |
| 96 | REPOSICIÓN DE PISO CON PORCELANATO 60X60 CM | 2022-04-27 → 2019-03-04 (-1150d) | 2022-04-27 → 2019-03-06 (-1148d) |
| 97 | **ELIMINACIÒN DE MATERIAL PROVENIENTE DE DEMOLICIÒN** | 2022-03-10 → 2018-12-29 (-1167d) | 2022-03-10 → 2018-12-30 (-1166d) |
| 98 | ELIMINACION DE DESMONTE PROVENIENTE DE DEMOLICIONES C/EQUIPO | 2022-03-10 → 2018-12-29 (-1167d) | 2022-03-10 → 2018-12-30 (-1166d) |
| 99 | **MOVIMIENTO DE TIERRAS** | 2022-03-09 → 2018-12-27 (-1168d) | 2022-04-30 → 2019-03-10 (-1147d) |
| 100 | EXCAVACIÓN MANUAL EN TERRENO SEMIRROCOSO PARA CANALES | 2022-03-09 → 2018-12-27 (-1168d) | 2022-03-12 → 2019-01-02 (-1165d) |
| 101 | EXCAVACIÓN MANUAL EN TERRENO SEMIRROCOSO PARA CAJAS DE INSPECCIÓN | 2022-03-14 → 2019-01-02 (-1167d) | 2022-03-18 → 2019-01-10 (-1163d) |
| 102 | EXCAVACION CON MAQUINARIA EN TERRENO NORMAL >4M | 2022-03-14 → 2019-01-02 (-1167d) | 2022-03-16 → 2019-01-07 (-1164d) |
| 103 | COMPACTADO DE SUBRASANTE DE CAJA Y CANALES | 2022-03-30 → 2019-01-25 (-1160d) | 2022-04-01 → 2019-01-29 (-1158d) |
| 104 | RELLENO Y COMPACTADO CON MATERIAL SELECCIONADO PARA INSTALACION DE RED COLECTORA | 2022-04-19 → 2019-02-21 (-1153d) | 2022-04-23 → 2019-03-01 (-1149d) |
| 105 | REFINE Y NIVELACION DE ZANJA EN TERRENO NORMAL PARA TUBERÍAS | 2022-03-14 → 2019-01-02 (-1167d) | 2022-03-18 → 2019-01-10 (-1163d) |
| 106 | REFINE Y NIVELACION DE ZANJA EN TERRENO NORMAL PARA CANALES | 2022-03-16 → 2019-01-06 (-1165d) | 2022-03-29 → 2019-01-25 (-1159d) |
| 107 | ACARREO MANUAL DE TUBERÍAS(D=60m) | 2022-04-02 → 2019-01-30 (-1158d) | 2022-04-12 → 2019-02-13 (-1154d) |
| 108 | ACARREO DE MEZCLA DE CONCRETO PARA CAJAS Y CANALES | 2022-04-02 → 2019-01-30 (-1158d) | 2022-04-06 → 2019-02-05 (-1156d) |
| 109 | ACARREO MANUAL INTERNO DE MATERIAL EXCEDENTE PROVENIENTE DE EXCAVACIONES | 2022-04-22 → 2019-02-26 (-1151d) | 2022-04-29 → 2019-03-09 (-1147d) |
| 110 | ELIMINACIÓN DE MATERIAL EXCEDENTE | 2022-04-30 → 2019-03-09 (-1148d) | 2022-04-30 → 2019-03-10 (-1147d) |
| 111 | **CONCRETO SIMPLE** | 2022-04-02 → 2019-01-30 (-1158d) | 2022-04-05 → 2019-02-03 (-1157d) |
| 112 | SOLADO EN CANAL DE CONCRETO EN PISO f'c= 100 kg/cm2 E=10CM | 2022-04-02 → 2019-01-30 (-1158d) | 2022-04-04 → 2019-02-02 (-1157d) |
| 113 | SOLADO PARA CAJAS DE INSPECCIÒN f'c= 100 kg/cm2 E=10CM | 2022-04-05 → 2019-02-02 (-1158d) | 2022-04-05 → 2019-02-03 (-1157d) |
| 114 | **RED DE RECOLECCIÓN** | 2022-04-05 → 2019-02-02 (-1158d) | 2022-04-25 → 2019-03-02 (-1150d) |
| 115 | CANAL DE CONCRETO ARMADO EN PISO A=30 CM H=VARIABLE, E=15cm | 2022-04-05 → 2019-02-02 (-1158d) | 2022-04-08 → 2019-02-08 (-1155d) |
| 116 | CANAL DE CONCRETO ARMADO EN PISO A=34CM H=VARIABLE, E=15cm | 2022-04-09 → 2019-02-08 (-1156d) | 2022-04-13 → 2019-02-14 (-1154d) |
| 117 | REJILLA METALICA TPO IV A=50cm | 2022-04-14 → 2019-02-15 (-1154d) | 2022-04-15 → 2019-02-18 (-1152d) |
| 118 | TAPA DE CONCRETO 70x70x5cm f'c=175kg/cm2 | 2022-04-09 → 2019-02-08 (-1156d) | 2022-04-09 → 2019-02-10 (-1154d) |
| 119 | TAPA DE CONCRETO 100x50x5cm f'c=175kg/cm2 | 2022-04-11 → 2019-02-10 (-1156d) | 2022-04-11 → 2019-02-11 (-1155d) |
| 120 | TAPA DE REJILLA 30X30cm | 2022-04-16 → 2019-02-18 (-1153d) | 2022-04-16 → 2019-02-19 (-1152d) |
| 121 | TAPA DE REJILLA 70X50cm | 2022-04-18 → 2019-02-19 (-1154d) | 2022-04-18 → 2019-02-21 (-1152d) |
| 122 | TAPA DE REJILLA 70X70cm | 2022-04-19 → 2019-02-21 (-1153d) | 2022-04-19 → 2019-02-22 (-1152d) |
| 123 | TAPA DE REJILLA 70X110cm | 2022-04-20 → 2019-02-23 (-1152d) | 2022-04-20 → 2019-02-24 (-1151d) |
| 124 | TAPA DE REJILLA 140X570cm | 2022-04-21 → 2019-02-24 (-1152d) | 2022-04-21 → 2019-02-26 (-1150d) |
| 125 | TUBERÍA PVC SAP C-10 Ø DE 3" MONTANTE | 2022-04-09 → 2019-02-08 (-1156d) | 2022-04-11 → 2019-02-11 (-1155d) |
| 126 | RED COLECTORA TUBERÍA PVC UF Ø DE 4" | 2022-04-12 → 2019-02-11 (-1156d) | 2022-04-12 → 2019-02-13 (-1154d) |
| 127 | RED COLECTORA TUBERÍA PVC UF Ø DE 6" | 2022-04-13 → 2019-02-13 (-1155d) | 2022-04-13 → 2019-02-14 (-1154d) |
| 128 | RED COLECTORA TUBERÍA PVC UF Ø DE 16" | 2022-04-14 → 2019-02-15 (-1154d) | 2022-04-15 → 2019-02-18 (-1152d) |
| 129 | CAJAS DE INSPECCIÓN TIPO II A=0.20M L=0.20M | 2022-04-06 → 2019-02-03 (-1158d) | 2022-04-06 → 2019-02-05 (-1156d) |
| 130 | CAJAS DE INSPECCIÓN TIPO II A=0.60M L=0.40M H=VARIABLE | 2022-04-07 → 2019-02-05 (-1157d) | 2022-04-08 → 2019-02-08 (-1155d) |
| 131 | CAJAS DE INSPECCIÓN TIPO II A=0.60M L=0.60M H=VARIABLE | 2022-04-09 → 2019-02-08 (-1156d) | 2022-04-11 → 2019-02-11 (-1155d) |
| 132 | CAJAS DE INSPECCIÓN TIPO II A=0.60M L=0.90M H=VARIABLE | 2022-04-12 → 2019-02-11 (-1156d) | 2022-04-12 → 2019-02-13 (-1154d) |
| 133 | CAJAS DE INSPECCIÓN TIPO II A=0.60M L=1.20M H=VARIABLE | 2022-04-13 → 2019-02-13 (-1155d) | 2022-04-13 → 2019-02-14 (-1154d) |
| 134 | CAJAS DE INSPECCIÓN TIPO VIIA DESARENADOR A=1.30 L=5.50M H=VARIABLE | 2022-04-14 → 2019-02-15 (-1154d) | 2022-04-14 → 2019-02-16 (-1153d) |
| 135 | TARRAJEO EN SECCION DE CAJAS INCL. ARISTAS | 2022-04-14 → 2019-02-15 (-1154d) | 2022-04-18 → 2019-02-21 (-1152d) |
| 136 | TARRAJEO EN SECCION DE CANALES INCL. ARISTAS | 2022-04-19 → 2019-02-21 (-1153d) | 2022-04-25 → 2019-03-02 (-1150d) |
| 137 | **ACCESORIOS** | 2022-04-12 → 2019-02-11 (-1156d) | 2022-04-13 → 2019-02-14 (-1154d) |
| 138 | CODO PVC SAP C-10 Ø 3" x 45° | 2022-04-12 → 2019-02-11 (-1156d) | 2022-04-13 → 2019-02-14 (-1154d) |
| 139 | CODO PVC SAP C-10 Ø 4" x 45° | 2022-04-12 → 2019-02-11 (-1156d) | 2022-04-12 → 2019-02-13 (-1154d) |
| 140 | CODO PVC SAP C-10 Ø 3" x 90° | 2022-04-12 → 2019-02-11 (-1156d) | 2022-04-12 → 2019-02-13 (-1154d) |

| ID | Task | Start | Finish |
| --- | --- | --- | --- |
| 141 | CODO PVC UF S-25 Ø 4" x 45° | 2022-04-12 → 2019-02-11 (-1156d) | 2022-04-12 → 2019-02-13 (-1154d) |
| 142 | CODO PVC UF-S-25 Ø 6" x 45° | 2022-04-12 → 2019-02-11 (-1156d) | 2022-04-12 → 2019-02-13 (-1154d) |
| 143 | CODO PVC UF-S-25 Ø 8" x 45° | 2022-04-12 → 2019-02-11 (-1156d) | 2022-04-12 → 2019-02-13 (-1154d) |
| 144 | CODO PVC UF-S-25 Ø 10" x 45° | 2022-04-12 → 2019-02-11 (-1156d) | 2022-04-12 → 2019-02-13 (-1154d) |
| 145 | CODO DE PVC UF S-25 Ø 6" x 90° | 2022-04-12 → 2019-02-11 (-1156d) | 2022-04-12 → 2019-02-13 (-1154d) |
| 146 | CODO PVC UF-S-25 Ø 10" x 90° | 2022-04-12 → 2019-02-11 (-1156d) | 2022-04-12 → 2019-02-13 (-1154d) |
| 147 | YEE DE PVC SAP C-10 Ø 3" | 2022-04-12 → 2019-02-11 (-1156d) | 2022-04-12 → 2019-02-13 (-1154d) |
| 148 | YEE DE PVC UF S-25 Ø 4" | 2022-04-12 → 2019-02-11 (-1156d) | 2022-04-12 → 2019-02-13 (-1154d) |
| 149 | YEE DE PVC UF S-25Ø 6" | 2022-04-12 → 2019-02-11 (-1156d) | 2022-04-12 → 2019-02-13 (-1154d) |
| 150 | REDUCCION DE PVC UF S-25 Ø 4" A 3" | 2022-04-12 → 2019-02-11 (-1156d) | 2022-04-12 → 2019-02-13 (-1154d) |
| 151 | REDUCCION DE PVC UF S-25 Ø 6" A 3" | 2022-04-12 → 2019-02-11 (-1156d) | 2022-04-12 → 2019-02-13 (-1154d) |
| 152 | REDUCCION DE PVC UF S-25 Ø 6" A 4" | 2022-04-12 → 2019-02-11 (-1156d) | 2022-04-12 → 2019-02-13 (-1154d) |
| 153 | **POZO DE PERCOLACION** | 2022-04-26 → 2019-03-03 (-1150d) | 2022-04-27 → 2019-03-06 (-1148d) |
| 154 | POZO DE PERCOLACION | 2022-04-26 → 2019-03-03 (-1150d) | 2022-04-27 → 2019-03-06 (-1148d) |
| 155 | **SISTEMA DE DESAGUE Y VENTILACION** | 2022-03-08 → 2018-12-25 (-1169d) | 2022-04-29 → 2019-03-09 (-1147d) |
| 156 | **TRABAJOS PRELIMINARES** | 2022-03-08 → 2018-12-25 (-1169d) | 2022-03-09 → 2018-12-28 (-1167d) |
| 157 | LIMPIEZA DE TERRENO MANUAL | 2022-03-08 → 2018-12-25 (-1169d) | 2022-03-08 → 2018-12-27 (-1167d) |
| 158 | TRAZO Y REPLANTEO PRELIMINAR | 2022-03-09 → 2018-12-27 (-1168d) | 2022-03-09 → 2018-12-28 (-1167d) |
| 159 | **MOVIMIENTO DE TIERRAS** | 2022-03-09 → 2018-12-27 (-1168d) | 2022-04-29 → 2019-03-09 (-1147d) |
| 160 | EXCAVACIÓN MANUAL EN TERRENO NORMAL PARA TUBERIA H<1m | 2022-03-10 → 2018-12-29 (-1167d) | 2022-03-21 → 2019-01-13 (-1163d) |
| 161 | EXCAVACIÓN MANUAL EN TERRENO NORMAL PARA TUBERIA H>1m | 2022-03-16 → 2019-01-06 (-1165d) | 2022-04-02 → 2019-01-31 (-1157d) |
| 162 | REFINE, NIVELACION Y CONFORMACION DE FONDOS DE ZANJA | 2022-03-26 → 2019-01-20 (-1161d) | 2022-04-07 → 2019-02-06 (-1156d) |
| 163 | CAMA DE APOYO CON MATERIAL PROPIO ZARANDEADO PARA TUBERIA | 2022-04-02 → 2019-01-30 (-1158d) | 2022-04-13 → 2019-02-14 (-1154d) |
| 164 | ACARREO DE TUBERIA PVC UF DE 4" - 6" | 2022-04-14 → 2019-02-15 (-1154d) | 2022-04-18 → 2019-02-21 (-1152d) |
| 165 | TUBERIA PVC UF S-25 DE Ø 4" | 2022-04-14 → 2019-02-15 (-1154d) | 2022-04-14 → 2019-02-16 (-1153d) |
| 166 | CODO PVC UF-S-25 Ø 6" x 45° | 2022-04-14 → 2019-02-15 (-1154d) | 2022-04-14 → 2019-02-16 (-1153d) |
| 167 | CODO PVC UF-S-25 Ø 6" x 90° | 2022-04-14 → 2019-02-15 (-1154d) | 2022-04-14 → 2019-02-16 (-1153d) |
| 168 | RELLENO Y COMPACTADO CON MATERIAL PROPIO SELECCIONADO | 2022-04-15 → 2019-02-16 (-1154d) | 2022-04-22 → 2019-02-27 (-1150d) |
| 169 | RELLENO Y COMPACTADO CON MATERIAL PROPIO SIN TRATAR | 2022-04-21 → 2019-02-24 (-1152d) | 2022-04-28 → 2019-03-07 (-1148d) |
| 170 | DEMOLICION DE VEREDA DE CONCRETO | 2022-03-09 → 2018-12-27 (-1168d) | 2022-03-10 → 2018-12-30 (-1166d) |
| 171 | ELIMINACIÓN DE MATERIAL EXCEDENTE | 2022-04-29 → 2019-03-07 (-1149d) | 2022-04-29 → 2019-03-09 (-1147d) |
| 172 | ELIMINACION DE MATERIAL PROVENIENTE DE DEMOLICION DE VEREDA | 2022-03-11 → 2018-12-30 (-1167d) | 2022-03-15 → 2019-01-05 (-1165d) |
| 173 | **CAMARAS DE INSPECCIÓN** | 2022-03-10 → 2018-12-29 (-1167d) | 2022-03-22 → 2019-01-15 (-1162d) |
| 174 | SOLADO f´c=100 Kg/cm2 E=10 CM | 2022-03-12 → 2019-01-01 (-1166d) | 2022-03-12 → 2019-01-02 (-1165d) |
| 175 | ACARREO DE MEZCLA DE CONCRETO | 2022-03-10 → 2018-12-29 (-1167d) | 2022-03-11 → 2019-01-01 (-1165d) |
| 176 | ENCOFRADO Y DESENCOFRADO EN CAJAS DE REGISTRO | 2022-03-14 → 2019-01-02 (-1167d) | 2022-03-18 → 2019-01-10 (-1163d) |
| 177 | ACABADO PULIDO | 2022-03-19 → 2019-01-10 (-1164d) | 2022-03-22 → 2019-01-15 (-1162d) |
| 178 | **ESTRUCTURAS** | 2022-03-14 → 2019-01-02 (-1167d) | 2022-03-19 → 2019-01-12 (-1162d) |
| 179 | COLUMNETAS DE CONCRETO f'c=175 Kg/cm2 PARA MONTANTES.. | 2022-03-14 → 2019-01-02 (-1167d) | 2022-03-19 → 2019-01-12 (-1162d) |
| 180 | **INSTALACIONES ELECTRICAS** | 2022-02-19 → 2018-12-03 (-1174d) | 2022-04-27 → 2019-03-06 (-1148d) |
| 181 | **ALIMENTADORES** | 2022-02-19 → 2018-12-03 (-1174d) | 2022-03-11 → 2019-01-01 (-1165d) |
| 182 | **INTERRUPTORES TERMOMAGNETICOS** | 2022-02-19 → 2018-12-03 (-1174d) | 2022-02-19 → 2018-12-04 (-1173d) |
| 183 | INTERRUPTOR TERMOMAGNETICO DE 2x25 A, 220V | 2022-02-19 → 2018-12-03 (-1174d) | 2022-02-19 → 2018-12-04 (-1173d) |
| 184 | **DUCTOS Y TUBERIAS** | 2022-02-21 → 2018-12-05 (-1174d) | 2022-03-03 → 2018-12-20 (-1169d) |
| 185 | TENDIDO DE TUBERIA PVC SAP 1 1/2" | 2022-02-21 → 2018-12-05 (-1174d) | 2022-02-25 → 2018-12-12 (-1171d) |
| 186 | CURVA PVC SAP 1 1/2" | 2022-02-26 → 2018-12-13 (-1171d) | 2022-03-01 → 2018-12-17 (-1170d) |
| 187 | CONECTOR PVC SAP 1 1/2" | 2022-02-26 → 2018-12-13 (-1171d) | 2022-02-28 → 2018-12-16 (-1170d) |
| 188 | TENDIDO DE TUBERIA PVC SAP 2" | 2022-02-26 → 2018-12-13 (-1171d) | 2022-03-01 → 2018-12-17 (-1170d) |
| 189 | CURVA PVC SAP 2" | 2022-03-02 → 2018-12-17 (-1171d) | 2022-03-02 → 2018-12-19 (-1169d) |
| 190 | CONECTOR PVC SAP 2" | 2022-03-02 → 2018-12-17 (-1171d) | 2022-03-03 → 2018-12-20 (-1169d) |
| 191 | **CONDUCTORES Y CABLES** | 2022-03-04 → 2018-12-21 (-1169d) | 2022-03-11 → 2019-01-01 (-1165d) |
| 192 | TENDIDO DE CABLE N2XOH DE 3X10mm2 | 2022-03-04 → 2018-12-21 (-1169d) | 2022-03-07 → 2018-12-25 (-1168d) |
| 193 | TENDIDO DE CABLE N2XOH DE 3x16mm² | 2022-03-04 → 2018-12-21 (-1169d) | 2022-03-05 → 2018-12-24 (-1167d) |
| 194 | TENDIDO DE CABLE N2XOH DE 3X25mm2 | 2022-03-07 → 2018-12-24 (-1169d) | 2022-03-07 → 2018-12-25 (-1168d) |
| 195 | TENDIDO DE CABLE N2XOH DE 3X35mm2 | 2022-03-07 → 2018-12-24 (-1169d) | 2022-03-09 → 2018-12-28 (-1167d) |
| 196 | TENDIDO DE CABLE N2XOH DE 3X70mm2 | 2022-03-10 → 2018-12-29 (-1167d) | 2022-03-10 → 2018-12-30 (-1166d) |
| 197 | TENDIDO DE CABLE N2XOH DE 3X95mm2 | 2022-03-10 → 2018-12-29 (-1167d) | 2022-03-10 → 2018-12-30 (-1166d) |
| 198 | CABLE DE COBRE DESNUDO DE 50MM2 | 2022-03-11 → 2018-12-30 (-1167d) | 2022-03-11 → 2019-01-01 (-1165d) |
| 199 | **ALUMBRADO** | 2022-02-21 → 2018-12-05 (-1174d) | 2022-04-27 → 2019-03-06 (-1148d) |
| 200 | **DUCTOS Y TUBERIAS** | 2022-02-21 → 2018-12-05 (-1174d) | 2022-02-26 → 2018-12-14 (-1170d) |
| 201 | CURVA METALICO EMT 19mm | 2022-02-26 → 2018-12-13 (-1171d) | 2022-02-26 → 2018-12-14 (-1170d) |
| 202 | CONECTOR RECTO METALICO EMT 19 mm | 2022-02-21 → 2018-12-05 (-1174d) | 2022-02-25 → 2018-12-12 (-1171d) |
| 203 | COPLE METALICO EMT 19 mm | 2022-02-26 → 2018-12-13 (-1171d) | 2022-02-26 → 2018-12-14 (-1170d) |
| 204 | TENDIDO DE TUBERIA EMT 1 1/2" | 2022-02-26 → 2018-12-13 (-1171d) | 2022-02-26 → 2018-12-14 (-1170d) |
| 205 | **ARTEFACTOS DE ILUMINACION** | 2022-02-28 → 2018-12-14 (-1172d) | 2022-04-27 → 2019-03-06 (-1148d) |
| 206 | **PARA TECHO** | 2022-02-28 → 2018-12-14 (-1172d) | 2022-04-15 → 2019-02-18 (-1152d) |
| 207 | LUMINARIA PANEL LED RECTANGULAR 1200X300mm | 2022-02-28 → 2018-12-14 (-1172d) | 2022-03-07 → 2018-12-25 (-1168d) |
| 208 | TUBO LED T5/T8 10W CON CARCASA, ACCESORIOS DE CONEXIÓN Y FIJACION | 2022-02-28 → 2018-12-14 (-1172d) | 2022-03-02 → 2018-12-19 (-1169d) |
| 209 | TUBO LED T5/T8 18W CON CARCASA, ACCESORIOS DE CONEXIÓN Y FIJACION | 2022-03-03 → 2018-12-19 (-1170d) | 2022-03-08 → 2018-12-27 (-1167d) |
| 210 | LUMINARIA PANEL LED PARA ADOSAR CIRCULAR DE 40 W | 2022-03-03 → 2018-12-19 (-1170d) | 2022-03-05 → 2018-12-24 (-1167d) |

| ID | Task | Start | Finish |
| --- | --- | --- | --- |
| 211 | LUMINARIA PANEL LED PARA ADOSAR CIRCULAR DE 24 W | 2022-03-07 → 2018-12-24 (-1169d) | 2022-03-10 → 2018-12-30 (-1166d) |
| 212 | LUMINARIA PANEL LED PARA ADOSAR CIRCULAR DE 18 W | 2022-03-07 → 2018-12-24 (-1169d) | 2022-03-15 → 2019-01-05 (-1165d) |
| 213 | LUMINARIA PANEL LED PARA ADOSAR CIRCULAR DE 12 W | 2022-03-16 → 2019-01-06 (-1165d) | 2022-03-17 → 2019-01-09 (-1163d) |
| 214 | LUMINARIA TIPO DICROICO DE 10W | 2022-03-16 → 2019-01-06 (-1165d) | 2022-03-21 → 2019-01-13 (-1163d) |
| 215 | FAROLA LED ORNAMENTAL 60W 6500K,IP65 | 2022-03-22 → 2019-01-14 (-1163d) | 2022-03-25 → 2019-01-20 (-1160d) |
| 216 | DOWNLUGTH LED PARA ADOSAR Y/O EMPOTRAR 20W | 2022-03-22 → 2019-01-14 (-1163d) | 2022-03-23 → 2019-01-17 (-1161d) |
| 217 | REFLECTOR LED 50W | 2022-03-24 → 2019-01-17 (-1162d) | 2022-03-26 → 2019-01-21 (-1160d) |
| 218 | MARCO PARA PANEL LED DE 30X120CM | 2022-03-24 → 2019-01-17 (-1162d) | 2022-03-31 → 2019-01-28 (-1158d) |
| 219 | APLIQUE LED 20W IP 65 | 2022-04-01 → 2019-01-28 (-1159d) | 2022-04-01 → 2019-01-29 (-1158d) |
| 220 | LUZ DE EMERGENCIA TIPO LED | 2022-04-02 → 2019-01-30 (-1158d) | 2022-04-06 → 2019-02-05 (-1156d) |
| 221 | LUMINARIA REFLECTOR LED DE 200W | 2022-04-07 → 2019-02-05 (-1157d) | 2022-04-09 → 2019-02-10 (-1154d) |
| 222 | REFLECTOR LED DE 10W INTERPERIE | 2022-04-11 → 2019-02-10 (-1156d) | 2022-04-11 → 2019-02-11 (-1155d) |
| 223 | APLIQUE DUAL DE MURO DUAL LED 2X11 W | 2022-04-12 → 2019-02-11 (-1156d) | 2022-04-13 → 2019-02-14 (-1154d) |
| 224 | LUZ GUIA LED 2W PARA EMPOTRAR | 2022-04-14 → 2019-02-15 (-1154d) | 2022-04-15 → 2019-02-18 (-1152d) |
| 225 | **INTERRUPTORES** | 2022-03-12 → 2019-01-01 (-1166d) | 2022-03-16 → 2019-01-07 (-1164d) |
| 226 | SALIDA PARA INTERRUPTOR CONMUTADO SIMPLE, INCLUYE INSTALACION | 2022-03-12 → 2019-01-01 (-1166d) | 2022-03-14 → 2019-01-04 (-1165d) |
| 227 | SALIDA PARA INTERRUPTOR CONMUTADO DOBLE, INCLUYE INSTALACION | 2022-03-15 → 2019-01-04 (-1166d) | 2022-03-16 → 2019-01-07 (-1164d) |
| 228 | **PRUEBAS ELECTRICAS** | 2022-04-16 → 2019-02-18 (-1153d) | 2022-04-27 → 2019-03-06 (-1148d) |
| 229 | MEDICION DE LUMINOCIDAD | 2022-04-16 → 2019-02-18 (-1153d) | 2022-04-18 → 2019-02-21 (-1152d) |
| 230 | MEDICION DE CONTINUIDAD | 2022-04-19 → 2019-02-21 (-1153d) | 2022-04-21 → 2019-02-26 (-1150d) |
| 231 | MEDION DE RESISTENCIA DE PUESTA A TIERRA | 2022-04-22 → 2019-02-26 (-1151d) | 2022-04-23 → 2019-03-01 (-1149d) |
| 232 | MEDICION DE AISLAMIENTO | 2022-04-25 → 2019-03-01 (-1151d) | 2022-04-27 → 2019-03-06 (-1148d) |
| 233 | **INSTALACIONES ESPECIALES** | 2022-02-19 → 2018-12-03 (-1174d) | 2022-04-18 → 2019-02-21 (-1152d) |
| 234 | **ACOMETIDAS Y BACKBONES** | 2022-02-19 → 2018-12-03 (-1174d) | 2022-03-04 → 2018-12-22 (-1168d) |
| 235 | **RACK DE COMUNICACIONES** | 2022-02-19 → 2018-12-03 (-1174d) | 2022-03-04 → 2018-12-22 (-1168d) |
| 236 | GABINETE DE PISO PARA COMUNICACIONES 42UR | 2022-02-19 → 2018-12-03 (-1174d) | 2022-02-23 → 2018-12-09 (-1172d) |
| 237 | GABINETE DE PISO PARA COMUNICACIONES 12UR | 2022-02-24 → 2018-12-09 (-1173d) | 2022-03-01 → 2018-12-17 (-1170d) |
| 238 | GABINETE DE PARED PARA COMUNICACIONES 12UR | 2022-03-02 → 2018-12-17 (-1171d) | 2022-03-04 → 2018-12-22 (-1168d) |
| 239 | **EQUIPOS Y ACCESORIOS** | 2022-02-24 → 2018-12-09 (-1173d) | 2022-03-21 → 2019-01-13 (-1163d) |
| 240 | SWITCH CORE DE 24 PUERTOS RJ45 10/100/1000Mbps | 2022-03-05 → 2018-12-22 (-1169d) | 2022-03-05 → 2018-12-24 (-1167d) |
| 241 | SWITCH POE DE 24 PUERTOS RJ45 10/100/1000Mbps | 2022-03-07 → 2018-12-24 (-1169d) | 2022-03-08 → 2018-12-27 (-1167d) |
| 242 | CENTRAL TELEFÓNICA IP HÍBRIDA | 2022-03-09 → 2018-12-27 (-1168d) | 2022-03-09 → 2018-12-28 (-1167d) |
| 243 | CENTRAL DE DETECCIÓN Y ALARMA CONTRAINCENDIO | 2022-03-10 → 2018-12-29 (-1167d) | 2022-03-10 → 2018-12-30 (-1166d) |
| 244 | ROUTER CLOUD CORE | 2022-03-11 → 2018-12-30 (-1167d) | 2022-03-11 → 2019-01-01 (-1165d) |
| 245 | **CONFIGURACION DE EQUIPOS** | 2022-02-24 → 2018-12-09 (-1173d) | 2022-03-21 → 2019-01-13 (-1163d) |
| 246 | CONFIGURACION DE SISTEMA DE DETECCION DE HUMO | 2022-03-12 → 2019-01-01 (-1166d) | 2022-03-17 → 2019-01-09 (-1163d) |
| 247 | CONFIGURACION DE TELEFONO IP | 2022-03-18 → 2019-01-09 (-1164d) | 2022-03-19 → 2019-01-12 (-1162d) |
| 248 | CONFIGURACION DE SISTEMA DE CENTRAL TELEFONICA | 2022-03-21 → 2019-01-12 (-1164d) | 2022-03-21 → 2019-01-13 (-1163d) |
| 249 | **CONDUCTORES DE COMUNICACIONES** | 2022-02-24 → 2018-12-09 (-1173d) | 2022-03-21 → 2019-01-13 (-1163d) |
| 250 | TENDIDO DE CABLE FPL ANTIFLAMA 2X16AWG LSZH | 2022-02-24 → 2018-12-09 (-1173d) | 2022-03-08 → 2018-12-27 (-1167d) |
| 251 | TENDIDO DE CABLE FTP CAT 6A | 2022-03-09 → 2018-12-27 (-1168d) | 2022-03-21 → 2019-01-13 (-1163d) |
| 252 | **RED DE VOZ, VIDEO Y DATOS** | 2022-02-19 → 2018-12-03 (-1174d) | 2022-04-18 → 2019-02-21 (-1152d) |
| 253 | **PATCH PANEL** | 2022-03-22 → 2019-01-14 (-1163d) | 2022-03-24 → 2019-01-18 (-1161d) |
| 254 | PATCH PANEL 24 PUERTOS CAT6 | 2022-03-22 → 2019-01-14 (-1163d) | 2022-03-24 → 2019-01-18 (-1161d) |
| 255 | **EQUIPOS Y ACCESORIOS** | 2022-03-25 → 2019-01-18 (-1162d) | 2022-04-18 → 2019-02-21 (-1152d) |
| 256 | ACCESS POINT WI-FI 4 POE OMNIDIRECCIONALES | 2022-03-25 → 2019-01-18 (-1162d) | 2022-03-30 → 2019-01-26 (-1159d) |
| 257 | CÁMARAS IP DOMO PoE IP67 IK10 | 2022-03-31 → 2019-01-26 (-1160d) | 2022-04-05 → 2019-02-03 (-1157d) |
| 258 | CÁMARAS IP PTZ DOMO PoE IP67 IK10 | 2022-03-31 → 2019-01-26 (-1160d) | 2022-04-05 → 2019-02-03 (-1157d) |
| 259 | CÁMARAS IP WIFI IP67 IK10 | 2022-04-06 → 2019-02-03 (-1158d) | 2022-04-06 → 2019-02-05 (-1156d) |
| 260 | CÁMARAS INTERIOR IP WIFI IP67 IK10 | 2022-04-06 → 2019-02-03 (-1158d) | 2022-04-09 → 2019-02-10 (-1154d) |
| 261 | GRABADOR NVR POE | 2022-04-11 → 2019-02-10 (-1156d) | 2022-04-11 → 2019-02-11 (-1155d) |
| 262 | TELÉFONO IP POE DE ESCRITORIO | 2022-04-12 → 2019-02-11 (-1156d) | 2022-04-18 → 2019-02-21 (-1152d) |
| 263 | TELÉFONO IP POE DE SMART | 2022-04-12 → 2019-02-11 (-1156d) | 2022-04-13 → 2019-02-14 (-1154d) |
| 264 | **OBRAS PROVICIONALES** | 2022-02-19 → 2018-12-03 (-1174d) | 2022-02-24 → 2018-12-11 (-1171d) |
| 265 | ARMADO DE ANDAMIO PARA INSTALACIONES | 2022-02-19 → 2018-12-03 (-1174d) | 2022-02-24 → 2018-12-11 (-1171d) |
| 266 | **SISTEMA DE EXTRACION DE AIRE** | 2022-03-22 → 2019-01-14 (-1163d) | 2022-03-24 → 2019-01-18 (-1161d) |
| 267 | **CONDUCTORES Y CABLES** | 2022-03-22 → 2019-01-14 (-1163d) | 2022-03-24 → 2019-01-18 (-1161d) |
| 268 | CABLE LSZH UNIPOLAR 4mm2 | 2022-03-22 → 2019-01-14 (-1163d) | 2022-03-24 → 2019-01-18 (-1161d) |
| 269 | Termino de Obra | 2022-02-19 → 2018-12-03 (-1174d) | 2022-02-19 → 2018-12-03 (-1174d) |
